| id | wbs | name | work_face_id | structure_id | discipline | planned_start | planned_finish | duration_h | duration_d | total_float_d | is_near_critical | crew_size | trade_id | thermal_sensitive | hold_point | in_demo_window |
| --- | --- | --- | --- | --- | --- | --- | --- | --- | --- | --- | --- | --- | --- | --- | --- | --- |
| A-1001 | FAB2.FAB.01 | Layout & survey control — FAB2 L1 slab — bay A1 | WF-FAB2-01 | FAB2 | civil | 2026-07-15T07:00:00-07:00 | 2026-07-16T07:30:00-07:00 | 10.5 | 1.05 | 2.43 | True | 3 |  |  |  |  |
| A-1002 | FAB2.FAB.01 | Formwork & rebar placement — FAB2 L1 slab — bay A1 | WF-FAB2-01 | FAB2 | structural | 2026-07-16T07:30:00-07:00 | 2026-07-18T15:36:00-07:00 | 28.1 | 2.81 | 2.43 | True | 9 |  |  |  |  |
| A-1003 | FAB2.FAB.01 | Slab pour — FAB2 L1 slab — bay A1 | WF-FAB2-01 | FAB2 | structural | 2026-07-18T15:36:00-07:00 | 2026-07-20T14:24:00-07:00 | 8.8 | 0.88 | 2.43 | True | 12 | concrete_cip_hot_weather | True | City of Phoenix inspector — reinforcing & embed inspection prior to pour |  |
| A-1004 | FAB2.FAB.01 | Slab finish & curing compound — FAB2 L1 slab — bay A1 | WF-FAB2-01 | FAB2 | structural | 2026-07-20T14:24:00-07:00 | 2026-07-22T06:06:00-07:00 | 11.7 | 1.17 | 9.77 |  | 6 |  |  |  |  |
| A-1005 | FAB2.FAB.01 | Structural steel erection — FAB2 L1 slab — bay A1 | WF-FAB2-01 | FAB2 | structural | 2026-07-27T14:06:00-07:00 | 2026-08-01T07:24:00-07:00 | 43.3 | 4.33 | 9.77 |  | 10 |  |  |  |  |
| A-1006 | FAB2.FAB.01 | Deck weld & shear stud installation — FAB2 L1 slab — bay A1 | WF-FAB2-01 | FAB2 | structural | 2026-08-01T07:24:00-07:00 | 2026-08-01T15:30:00-07:00 | 8.1 | 0.81 | 9.77 |  | 4 | structural_welding_preheat | True |  |  |
| A-1007 | FAB2.FAB.01 | Adhesive anchor installation — FAB2 L1 slab — bay A1 | WF-FAB2-01 | FAB2 | structural | 2026-08-01T15:30:00-07:00 | 2026-08-03T11:06:00-07:00 | 5.6 | 0.56 | 9.77 |  | 3 | adhesive_anchor_epoxy | True |  |  |
| A-1008 | FAB2.FAB.01 | Spray-applied fireproofing — FAB2 L1 slab — bay A1 | WF-FAB2-01 | FAB2 | structural | 2026-08-04T09:06:00-07:00 | 2026-08-05T09:00:00-07:00 | 9.9 | 0.99 | 9.77 |  | 6 | sfrm_spray_applied_fireproofing | True |  |  |
| A-1009 | FAB2.FAB.01 | Structural steel high-build coating — FAB2 L1 slab — bay A1 | WF-FAB2-01 | FAB2 | structural | 2026-08-07T13:00:00-07:00 | 2026-08-08T09:12:00-07:00 | 6.2 | 0.62 | 127.79 |  | 5 | coating_epoxy_structural_steel | True |  |  |
| A-1010 | FAB2.FAB.01 | MEP hanger & rough-in — FAB2 L1 slab — bay A1 | WF-FAB2-01 | FAB2 | mechanical | 2026-08-08T09:12:00-07:00 | 2026-08-11T15:30:00-07:00 | 26.3 | 2.63 | 127.79 |  | 8 |  |  |  |  |
| A-1011 | FAB2.FAB.02 | Layout & survey control — FAB2 L1 slab — bay B1 | WF-FAB2-02 | FAB2 | civil | 2026-07-16T08:00:00-07:00 | 2026-07-17T09:18:00-07:00 | 11.3 | 1.13 | 1.2 | True | 3 |  |  |  |  |
| A-1012 | FAB2.FAB.02 | Formwork & rebar placement — FAB2 L1 slab — bay B1 | WF-FAB2-02 | FAB2 | structural | 2026-07-17T09:18:00-07:00 | 2026-07-21T12:18:00-07:00 | 33 | 3.3 | 1.2 | True | 9 |  |  |  |  |
| A-1013 | FAB2.FAB.02 | Slab pour — FAB2 L1 slab — bay B1 | WF-FAB2-02 | FAB2 | structural | 2026-07-21T12:18:00-07:00 | 2026-07-22T11:48:00-07:00 | 9.5 | 0.95 | 1.2 | True | 12 | concrete_cip_hot_weather | True |  |  |
| A-1014 | FAB2.FAB.02 | Slab finish & curing compound — FAB2 L1 slab — bay B1 | WF-FAB2-02 | FAB2 | structural | 2026-07-22T11:48:00-07:00 | 2026-07-23T11:42:00-07:00 | 9.9 | 0.99 | 9.3 |  | 6 |  |  |  |  |
| A-1015 | FAB2.FAB.02 | Structural steel erection — FAB2 L1 slab — bay B1 | WF-FAB2-02 | FAB2 | structural | 2026-07-29T09:42:00-07:00 | 2026-08-03T11:48:00-07:00 | 42.1 | 4.21 | 9.3 |  | 10 |  |  |  |  |
| A-1016 | FAB2.FAB.02 | Deck weld & shear stud installation — FAB2 L1 slab — bay B1 | WF-FAB2-02 | FAB2 | structural | 2026-08-03T11:48:00-07:00 | 2026-08-04T09:54:00-07:00 | 8.1 | 0.81 | 9.3 |  | 4 | structural_welding_preheat | True |  |  |
| A-1017 | FAB2.FAB.02 | Adhesive anchor installation — FAB2 L1 slab — bay B1 | WF-FAB2-02 | FAB2 | structural | 2026-08-04T09:54:00-07:00 | 2026-08-04T15:48:00-07:00 | 5.9 | 0.59 | 9.3 |  | 3 | adhesive_anchor_epoxy | True |  |  |
| A-1018 | FAB2.FAB.02 | Spray-applied fireproofing — FAB2 L1 slab — bay B1 | WF-FAB2-02 | FAB2 | structural | 2026-08-05T13:48:00-07:00 | 2026-08-06T14:54:00-07:00 | 11.1 | 1.11 | 9.3 |  | 6 | sfrm_spray_applied_fireproofing | True |  |  |
| A-1019 | FAB2.FAB.02 | Structural steel high-build coating — FAB2 L1 slab — bay B1 | WF-FAB2-02 | FAB2 | structural | 2026-08-10T08:54:00-07:00 | 2026-08-10T15:18:00-07:00 | 6.4 | 0.64 | 125.65 |  | 5 | coating_epoxy_structural_steel | True |  |  |
| A-1020 | FAB2.FAB.02 | MEP hanger & rough-in — FAB2 L1 slab — bay B1 | WF-FAB2-02 | FAB2 | mechanical | 2026-08-10T15:18:00-07:00 | 2026-08-14T06:54:00-07:00 | 31.6 | 3.16 | 125.65 |  | 8 |  |  |  |  |
| A-1021 | FAB2.FAB.03 | Layout & survey control — FAB2 L1 slab — bay C1 | WF-FAB2-03 | FAB2 | civil | 2026-07-16T13:00:00-07:00 | 2026-07-17T13:18:00-07:00 | 10.3 | 1.03 | 1.93 | True | 3 |  |  |  |  |
| A-1022 | FAB2.FAB.03 | Formwork & rebar placement — FAB2 L1 slab — bay C1 | WF-FAB2-03 | FAB2 | structural | 2026-07-17T13:18:00-07:00 | 2026-07-21T13:00:00-07:00 | 29.7 | 2.97 | 1.93 | True | 9 |  |  |  |  |
| A-1023 | FAB2.FAB.03 | Slab pour — FAB2 L1 slab — bay C1 | WF-FAB2-03 | FAB2 | structural | 2026-07-21T13:00:00-07:00 | 2026-07-22T11:00:00-07:00 | 8 | 0.8 | 1.93 | True | 12 | concrete_cip_hot_weather | True | City of Phoenix inspector — reinforcing & embed inspection prior to pour |  |
| A-1024 | FAB2.FAB.03 | Slab finish & curing compound — FAB2 L1 slab — bay C1 | WF-FAB2-03 | FAB2 | structural | 2026-07-22T11:00:00-07:00 | 2026-07-23T09:42:00-07:00 | 8.7 | 0.87 | 10.24 |  | 6 |  |  |  |  |
| A-1025 | FAB2.FAB.03 | Structural steel erection — FAB2 L1 slab — bay C1 | WF-FAB2-03 | FAB2 | structural | 2026-07-29T07:42:00-07:00 | 2026-08-03T13:18:00-07:00 | 45.6 | 4.56 | 10.24 |  | 10 |  |  |  |  |
| A-1026 | FAB2.FAB.03 | Deck weld & shear stud installation — FAB2 L1 slab — bay C1 | WF-FAB2-03 | FAB2 | structural | 2026-08-03T13:18:00-07:00 | 2026-08-04T11:00:00-07:00 | 7.7 | 0.77 | 10.24 |  | 4 | structural_welding_preheat | True |  |  |
| A-1027 | FAB2.FAB.03 | Adhesive anchor installation — FAB2 L1 slab — bay C1 | WF-FAB2-03 | FAB2 | structural | 2026-08-04T11:00:00-07:00 | 2026-08-05T06:24:00-07:00 | 5.4 | 0.54 | 10.24 |  | 3 | adhesive_anchor_epoxy | True |  |  |
| A-1028 | FAB2.FAB.03 | Spray-applied fireproofing — FAB2 L1 slab — bay C1 | WF-FAB2-03 | FAB2 | structural | 2026-08-06T13:48:00-07:00 | 2026-08-07T13:48:00-07:00 | 10 | 1 | 9.3 |  | 6 | sfrm_spray_applied_fireproofing | True | Special inspector — SFRM thickness & density verification |  |
| A-1029 | FAB2.FAB.03 | Structural steel high-build coating — FAB2 L1 slab — bay C1 | WF-FAB2-03 | FAB2 | structural | 2026-08-11T07:48:00-07:00 | 2026-08-11T13:30:00-07:00 | 5.7 | 0.57 | 124.47 |  | 5 | coating_epoxy_structural_steel | True |  |  |
| A-1030 | FAB2.FAB.03 | MEP hanger & rough-in — FAB2 L1 slab — bay C1 | WF-FAB2-03 | FAB2 | mechanical | 2026-08-11T13:30:00-07:00 | 2026-08-15T08:42:00-07:00 | 35.2 | 3.52 | 124.47 |  | 8 |  |  |  |  |
| A-1031 | FAB2.FAB.04 | Layout & survey control — FAB2 L1 slab — bay D1 | WF-FAB2-04 | FAB2 | civil | 2026-07-17T08:00:00-07:00 | 2026-07-18T09:18:00-07:00 | 11.3 | 1.13 | 2.37 | True | 3 |  |  |  |  |
| A-1032 | FAB2.FAB.04 | Formwork & rebar placement — FAB2 L1 slab — bay D1 | WF-FAB2-04 | FAB2 | structural | 2026-07-18T09:18:00-07:00 | 2026-07-22T11:12:00-07:00 | 31.9 | 3.19 | 2.37 | True | 9 |  |  |  |  |
| A-1033 | FAB2.FAB.04 | Slab pour — FAB2 L1 slab — bay D1 | WF-FAB2-04 | FAB2 | structural | 2026-07-22T11:12:00-07:00 | 2026-07-23T09:54:00-07:00 | 8.7 | 0.87 | 2.37 | True | 12 | concrete_cip_hot_weather | True | City of Phoenix inspector — reinforcing & embed inspection prior to pour |  |
| A-1034 | FAB2.FAB.04 | Slab finish & curing compound — FAB2 L1 slab — bay D1 | WF-FAB2-04 | FAB2 | structural | 2026-07-23T09:54:00-07:00 | 2026-07-24T11:18:00-07:00 | 11.4 | 1.14 | 10.85 |  | 6 |  |  |  |  |
| A-1035 | FAB2.FAB.04 | Structural steel erection — FAB2 L1 slab — bay D1 | WF-FAB2-04 | FAB2 | structural | 2026-07-30T09:18:00-07:00 | 2026-08-04T07:42:00-07:00 | 38.4 | 3.84 | 10.85 |  | 10 |  |  |  |  |
| A-1036 | FAB2.FAB.04 | Deck weld & shear stud installation — FAB2 L1 slab — bay D1 | WF-FAB2-04 | FAB2 | structural | 2026-08-04T07:42:00-07:00 | 2026-08-04T15:42:00-07:00 | 8 | 0.8 | 10.85 |  | 4 | structural_welding_preheat | True |  |  |
| A-1037 | FAB2.FAB.04 | Adhesive anchor installation — FAB2 L1 slab — bay D1 | WF-FAB2-04 | FAB2 | structural | 2026-08-04T15:42:00-07:00 | 2026-08-05T10:18:00-07:00 | 4.6 | 0.46 | 10.85 |  | 3 | adhesive_anchor_epoxy | True |  |  |
| A-1038 | FAB2.FAB.04 | Spray-applied fireproofing — FAB2 L1 slab — bay D1 | WF-FAB2-04 | FAB2 | structural | 2026-08-07T13:48:00-07:00 | 2026-08-08T13:18:00-07:00 | 9.5 | 0.95 | 9.3 |  | 6 | sfrm_spray_applied_fireproofing | True |  |  |
| A-1039 | FAB2.FAB.04 | Structural steel high-build coating — FAB2 L1 slab — bay D1 | WF-FAB2-04 | FAB2 | structural | 2026-08-12T07:18:00-07:00 | 2026-08-12T14:18:00-07:00 | 7 | 0.7 | 124.06 |  | 5 | coating_epoxy_structural_steel | True |  |  |
| A-1040 | FAB2.FAB.04 | MEP hanger & rough-in — FAB2 L1 slab — bay D1 | WF-FAB2-04 | FAB2 | mechanical | 2026-08-12T14:18:00-07:00 | 2026-08-15T12:48:00-07:00 | 28.5 | 2.85 | 124.06 |  | 8 |  |  |  |  |
| A-1041 | FAB2.FAB.05 | Layout & survey control — FAB2 L2 deck — bay A2 | WF-FAB2-05 | FAB2 | civil | 2026-07-29T06:24:00-07:00 | 2026-07-30T07:00:00-07:00 | 10.6 | 1.06 | 2.43 | True | 3 |  |  |  |  |
| A-1042 | FAB2.FAB.05 | Formwork & rebar placement — FAB2 L2 deck — bay A2 | WF-FAB2-05 | FAB2 | structural | 2026-07-30T07:00:00-07:00 | 2026-08-03T11:18:00-07:00 | 34.3 | 3.43 | 2.43 | True | 9 |  |  |  |  |
| A-1043 | FAB2.FAB.05 | Slab pour — FAB2 L2 deck — bay A2 | WF-FAB2-05 | FAB2 | structural | 2026-08-03T11:18:00-07:00 | 2026-08-04T08:24:00-07:00 | 7.1 | 0.71 | 2.43 | True | 12 | concrete_cip_hot_weather | True |  |  |
| A-1044 | FAB2.FAB.05 | Slab finish & curing compound — FAB2 L2 deck — bay A2 | WF-FAB2-05 | FAB2 | structural | 2026-08-04T08:24:00-07:00 | 2026-08-05T08:00:00-07:00 | 9.6 | 0.96 | 2.43 | True | 6 |  |  |  |  |
| A-1045 | FAB2.FAB.05 | Structural steel erection — FAB2 L2 deck — bay A2 | WF-FAB2-05 | FAB2 | structural | 2026-08-11T06:00:00-07:00 | 2026-08-14T11:12:00-07:00 | 35.2 | 3.52 | 2.43 | True | 10 |  |  |  |  |
| A-1046 | FAB2.FAB.05 | Deck weld & shear stud installation — FAB2 L2 deck — bay A2 | WF-FAB2-05 | FAB2 | structural | 2026-08-14T11:12:00-07:00 | 2026-08-15T10:12:00-07:00 | 9 | 0.9 | 2.43 | True | 4 | structural_welding_preheat | True |  |  |
| A-1047 | FAB2.FAB.05 | Adhesive anchor installation — FAB2 L2 deck — bay A2 | WF-FAB2-05 | FAB2 | structural | 2026-08-15T10:12:00-07:00 | 2026-08-15T14:30:00-07:00 | 4.3 | 0.43 | 2.43 | True | 3 | adhesive_anchor_epoxy | True |  |  |
| A-1048 | FAB2.FAB.05 | Spray-applied fireproofing — FAB2 L2 deck — bay A2 | WF-FAB2-05 | FAB2 | structural | 2026-08-17T12:30:00-07:00 | 2026-08-18T12:24:00-07:00 | 9.9 | 0.99 | 2.43 | True | 6 | sfrm_spray_applied_fireproofing | True |  |  |
| A-1049 | FAB2.FAB.05 | Structural steel high-build coating — FAB2 L2 deck — bay A2 | WF-FAB2-05 | FAB2 | structural | 2026-08-21T06:24:00-07:00 | 2026-08-21T13:06:00-07:00 | 6.7 | 0.67 | 115.96 |  | 5 | coating_epoxy_structural_steel | True |  |  |
| A-1050 | FAB2.FAB.05 | MEP hanger & rough-in — FAB2 L2 deck — bay A2 | WF-FAB2-05 | FAB2 | mechanical | 2026-08-21T13:06:00-07:00 | 2026-08-25T13:48:00-07:00 | 30.7 | 3.07 | 115.96 |  | 8 |  |  |  | True |
| A-1051 | FAB2.FAB.06 | Layout & survey control — FAB2 L2 deck — bay B2 | WF-FAB2-06 | FAB2 | civil | 2026-07-30T13:48:00-07:00 | 2026-07-31T15:24:00-07:00 | 11.6 | 1.16 | 1.2 | True | 3 |  |  |  |  |
| A-1052 | FAB2.FAB.06 | Formwork & rebar placement — FAB2 L2 deck — bay B2 | WF-FAB2-06 | FAB2 | structural | 2026-07-31T15:24:00-07:00 | 2026-08-05T07:06:00-07:00 | 31.7 | 3.17 | 1.2 | True | 9 |  |  |  |  |
| A-1053 | FAB2.FAB.06 | Slab pour — FAB2 L2 deck — bay B2 | WF-FAB2-06 | FAB2 | structural | 2026-08-05T07:06:00-07:00 | 2026-08-06T06:00:00-07:00 | 8.9 | 0.89 | 1.2 | True | 12 | concrete_cip_hot_weather | True |  |  |
| A-1054 | FAB2.FAB.06 | Slab finish & curing compound — FAB2 L2 deck — bay B2 | WF-FAB2-06 | FAB2 | structural | 2026-08-06T06:00:00-07:00 | 2026-08-06T14:36:00-07:00 | 8.6 | 0.86 | 1.2 | True | 6 |  |  |  |  |
| A-1055 | FAB2.FAB.06 | Structural steel erection — FAB2 L2 deck — bay B2 | WF-FAB2-06 | FAB2 | structural | 2026-08-12T12:36:00-07:00 | 2026-08-17T12:48:00-07:00 | 40.2 | 4.02 | 1.2 | True | 10 |  |  |  |  |
| A-1056 | FAB2.FAB.06 | Deck weld & shear stud installation — FAB2 L2 deck — bay B2 | WF-FAB2-06 | FAB2 | structural | 2026-08-17T12:48:00-07:00 | 2026-08-18T11:36:00-07:00 | 8.8 | 0.88 | 1.2 | True | 4 | structural_welding_preheat | True |  |  |
| A-1057 | FAB2.FAB.06 | Adhesive anchor installation — FAB2 L2 deck — bay B2 | WF-FAB2-06 | FAB2 | structural | 2026-08-18T11:36:00-07:00 | 2026-08-19T06:48:00-07:00 | 5.2 | 0.52 | 1.2 | True | 3 | adhesive_anchor_epoxy | True |  |  |
| A-1058 | FAB2.FAB.06 | Spray-applied fireproofing — FAB2 L2 deck — bay B2 | WF-FAB2-06 | FAB2 | structural | 2026-08-19T14:48:00-07:00 | 2026-08-21T06:18:00-07:00 | 11.5 | 1.15 | 1.2 | True | 6 | sfrm_spray_applied_fireproofing | True |  |  |
| A-1059 | FAB2.FAB.06 | Structural steel high-build coating — FAB2 L2 deck — bay B2 | WF-FAB2-06 | FAB2 | structural | 2026-08-24T10:18:00-07:00 | 2026-08-25T07:18:00-07:00 | 7 | 0.7 | 113.16 |  | 5 | coating_epoxy_structural_steel | True |  | True |
| A-1060 | FAB2.FAB.06 | MEP hanger & rough-in — FAB2 L2 deck — bay B2 | WF-FAB2-06 | FAB2 | mechanical | 2026-08-25T07:18:00-07:00 | 2026-08-28T11:48:00-07:00 | 34.5 | 3.45 | 113.16 |  | 8 |  |  |  | True |
| A-1061 | FAB2.FAB.07 | Layout & survey control — FAB2 L2 deck — bay C2 | WF-FAB2-07 | FAB2 | civil | 2026-07-30T13:00:00-07:00 | 2026-07-31T11:54:00-07:00 | 8.9 | 0.89 | 1.93 | True | 3 |  |  |  |  |
| A-1062 | FAB2.FAB.07 | Formwork & rebar placement — FAB2 L2 deck — bay C2 | WF-FAB2-07 | FAB2 | structural | 2026-07-31T11:54:00-07:00 | 2026-08-05T07:24:00-07:00 | 35.5 | 3.55 | 1.93 | True | 9 |  |  |  |  |
| A-1063 | FAB2.FAB.07 | Slab pour — FAB2 L2 deck — bay C2 | WF-FAB2-07 | FAB2 | structural | 2026-08-05T07:24:00-07:00 | 2026-08-05T15:36:00-07:00 | 8.2 | 0.82 | 1.93 | True | 12 | concrete_cip_hot_weather | True |  |  |
| A-1064 | FAB2.FAB.07 | Slab finish & curing compound — FAB2 L2 deck — bay C2 | WF-FAB2-07 | FAB2 | structural | 2026-08-05T15:36:00-07:00 | 2026-08-06T14:12:00-07:00 | 8.6 | 0.86 | 1.93 | True | 6 |  |  |  |  |
| A-1065 | FAB2.FAB.07 | Structural steel erection — FAB2 L2 deck — bay C2 | WF-FAB2-07 | FAB2 | structural | 2026-08-12T12:12:00-07:00 | 2026-08-17T15:06:00-07:00 | 42.9 | 4.29 | 1.93 | True | 10 |  |  |  |  |
| A-1066 | FAB2.FAB.07 | Deck weld & shear stud installation — FAB2 L2 deck — bay C2 | WF-FAB2-07 | FAB2 | structural | 2026-08-17T15:06:00-07:00 | 2026-08-18T13:54:00-07:00 | 8.8 | 0.88 | 1.93 | True | 4 | structural_welding_preheat | True |  |  |
| A-1067 | FAB2.FAB.07 | Adhesive anchor installation — FAB2 L2 deck — bay C2 | WF-FAB2-07 | FAB2 | structural | 2026-08-18T13:54:00-07:00 | 2026-08-19T09:30:00-07:00 | 5.6 | 0.56 | 1.93 | True | 3 | adhesive_anchor_epoxy | True |  |  |
| A-1068 | FAB2.FAB.07 | Spray-applied fireproofing — FAB2 L2 deck — bay C2 | WF-FAB2-07 | FAB2 | structural | 2026-08-20T14:48:00-07:00 | 2026-08-21T15:30:00-07:00 | 10.7 | 1.07 | 1.2 | True | 6 | sfrm_spray_applied_fireproofing | True |  |  |
| A-1069 | FAB2.FAB.07 | Structural steel high-build coating — FAB2 L2 deck — bay C2 | WF-FAB2-07 | FAB2 | structural | 2026-08-25T09:30:00-07:00 | 2026-08-25T15:36:00-07:00 | 6.1 | 0.61 | 112.33 |  | 5 | coating_epoxy_structural_steel | True |  | True |
| A-1070 | FAB2.FAB.07 | MEP hanger & rough-in — FAB2 L2 deck — bay C2 | WF-FAB2-07 | FAB2 | mechanical | 2026-08-25T15:36:00-07:00 | 2026-08-29T10:06:00-07:00 | 34.5 | 3.45 | 112.33 |  | 8 |  |  |  | True |

| id | wbs | name | work_face_id | structure_id | discipline | planned_start | planned_finish | duration_h | duration_d | total_float_d | is_near_critical | crew_size | trade_id | thermal_sensitive | hold_point | in_demo_window |
| --- | --- | --- | --- | --- | --- | --- | --- | --- | --- | --- | --- | --- | --- | --- | --- | --- |
| A-1071 | FAB2.FAB.08 | Layout & survey control — FAB2 L2 deck — bay D2 | WF-FAB2-08 | FAB2 | civil | 2026-07-31T11:54:00-07:00 | 2026-08-01T12:12:00-07:00 | 10.3 | 1.03 | 2.37 | True | 3 |  |  |  |  |
| A-1072 | FAB2.FAB.08 | Formwork & rebar placement — FAB2 L2 deck — bay D2 | WF-FAB2-08 | FAB2 | structural | 2026-08-01T12:12:00-07:00 | 2026-08-05T13:48:00-07:00 | 31.6 | 3.16 | 2.37 | True | 9 |  |  |  |  |
| A-1073 | FAB2.FAB.08 | Slab pour — FAB2 L2 deck — bay D2 | WF-FAB2-08 | FAB2 | structural | 2026-08-05T13:48:00-07:00 | 2026-08-06T12:30:00-07:00 | 8.7 | 0.87 | 2.37 | True | 12 | concrete_cip_hot_weather | True |  |  |
| A-1074 | FAB2.FAB.08 | Slab finish & curing compound — FAB2 L2 deck — bay D2 | WF-FAB2-08 | FAB2 | structural | 2026-08-06T12:30:00-07:00 | 2026-08-07T11:06:00-07:00 | 8.6 | 0.86 | 2.37 | True | 6 |  |  |  |  |
| A-1075 | FAB2.FAB.08 | Structural steel erection — FAB2 L2 deck — bay D2 | WF-FAB2-08 | FAB2 | structural | 2026-08-13T09:06:00-07:00 | 2026-08-18T10:54:00-07:00 | 41.8 | 4.18 | 2.37 | True | 10 |  |  |  |  |
| A-1076 | FAB2.FAB.08 | Deck weld & shear stud installation — FAB2 L2 deck — bay D2 | WF-FAB2-08 | FAB2 | structural | 2026-08-18T10:54:00-07:00 | 2026-08-19T09:36:00-07:00 | 8.7 | 0.87 | 2.37 | True | 4 | structural_welding_preheat | True |  |  |
| A-1077 | FAB2.FAB.08 | Adhesive anchor installation — FAB2 L2 deck — bay D2 | WF-FAB2-08 | FAB2 | structural | 2026-08-19T09:36:00-07:00 | 2026-08-19T15:06:00-07:00 | 5.5 | 0.55 | 2.37 | True | 3 | adhesive_anchor_epoxy | True |  |  |
| A-1078 | FAB2.FAB.08 | Spray-applied fireproofing — FAB2 L2 deck — bay D2 | WF-FAB2-08 | FAB2 | structural | 2026-08-21T14:48:00-07:00 | 2026-08-22T14:30:00-07:00 | 9.7 | 0.97 | 1.2 | True | 6 | sfrm_spray_applied_fireproofing | True | Special inspector — SFRM thickness & density verification |  |
| A-1079 | FAB2.FAB.08 | Structural steel high-build coating — FAB2 L2 deck — bay D2 | WF-FAB2-08 | FAB2 | structural | 2026-08-26T08:30:00-07:00 | 2026-08-26T13:42:00-07:00 | 5.2 | 0.52 | 111.64 |  | 5 | coating_epoxy_structural_steel | True |  | True |
| A-1080 | FAB2.FAB.08 | MEP hanger & rough-in — FAB2 L2 deck — bay D2 | WF-FAB2-08 | FAB2 | mechanical | 2026-08-26T13:42:00-07:00 | 2026-08-31T07:00:00-07:00 | 33.3 | 3.33 | 111.64 |  | 8 |  |  |  | True |
| A-1081 | FAB2.FAB.09 | Layout & survey control — FAB2 L3 deck — bay A3 | WF-FAB2-09 | FAB2 | civil | 2026-07-29T06:24:00-07:00 | 2026-07-30T07:30:00-07:00 | 11.1 | 1.11 | 6.2 |  | 3 |  |  |  |  |
| A-1082 | FAB2.FAB.09 | Formwork & rebar placement — FAB2 L3 deck — bay A3 | WF-FAB2-09 | FAB2 | structural | 2026-07-30T07:30:00-07:00 | 2026-08-03T12:06:00-07:00 | 34.6 | 3.46 | 6.2 |  | 9 |  |  |  |  |
| A-1083 | FAB2.FAB.09 | Slab pour — FAB2 L3 deck — bay A3 | WF-FAB2-09 | FAB2 | structural | 2026-08-03T12:06:00-07:00 | 2026-08-04T09:24:00-07:00 | 7.3 | 0.73 | 6.2 |  | 12 | concrete_cip_hot_weather | True |  |  |
| A-1084 | FAB2.FAB.09 | Slab finish & curing compound — FAB2 L3 deck — bay A3 | WF-FAB2-09 | FAB2 | structural | 2026-08-04T09:24:00-07:00 | 2026-08-05T09:30:00-07:00 | 10.1 | 1.01 | 6.2 |  | 6 |  |  |  |  |
| A-1085 | FAB2.FAB.09 | Structural steel erection — FAB2 L3 deck — bay A3 | WF-FAB2-09 | FAB2 | structural | 2026-08-11T07:30:00-07:00 | 2026-08-14T14:30:00-07:00 | 37 | 3.7 | 6.2 |  | 10 |  |  |  |  |
| A-1086 | FAB2.FAB.09 | Deck weld & shear stud installation — FAB2 L3 deck — bay A3 | WF-FAB2-09 | FAB2 | structural | 2026-08-14T14:30:00-07:00 | 2026-08-15T12:24:00-07:00 | 7.9 | 0.79 | 6.2 |  | 4 | structural_welding_preheat | True |  |  |
| A-1087 | FAB2.FAB.09 | Adhesive anchor installation — FAB2 L3 deck — bay A3 | WF-FAB2-09 | FAB2 | structural | 2026-08-15T12:24:00-07:00 | 2026-08-17T06:48:00-07:00 | 4.4 | 0.44 | 6.2 |  | 3 | adhesive_anchor_epoxy | True |  |  |
| A-1088 | FAB2.FAB.09 | Spray-applied fireproofing — FAB2 L3 deck — bay A3 | WF-FAB2-09 | FAB2 | structural | 2026-08-22T14:48:00-07:00 | 2026-08-25T06:30:00-07:00 | 11.7 | 1.17 | 1.2 | True | 6 | sfrm_spray_applied_fireproofing | True |  | True |
| A-1089 | FAB2.FAB.09 | Structural steel high-build coating — FAB2 L3 deck — bay A3 | WF-FAB2-09 | FAB2 | structural | 2026-08-27T10:30:00-07:00 | 2026-08-28T07:24:00-07:00 | 6.9 | 0.69 | 110.42 |  | 5 | coating_epoxy_structural_steel | True |  |  |
| A-1090 | FAB2.FAB.09 | MEP hanger & rough-in — FAB2 L3 deck — bay A3 | WF-FAB2-09 | FAB2 | mechanical | 2026-08-28T07:24:00-07:00 | 2026-09-01T09:12:00-07:00 | 31.8 | 3.18 | 110.42 |  | 8 |  |  |  |  |
| A-1091 | FAB2.FAB.10 | Layout & survey control — FAB2 L3 deck — bay B3 | WF-FAB2-10 | FAB2 | civil | 2026-07-30T13:48:00-07:00 | 2026-07-31T15:12:00-07:00 | 11.4 | 1.14 | 5.32 |  | 3 |  |  |  |  |
| A-1092 | FAB2.FAB.10 | Formwork & rebar placement — FAB2 L3 deck — bay B3 | WF-FAB2-10 | FAB2 | structural | 2026-07-31T15:12:00-07:00 | 2026-08-04T11:06:00-07:00 | 25.9 | 2.59 | 5.32 |  | 9 |  |  |  |  |
| A-1093 | FAB2.FAB.10 | Slab pour — FAB2 L3 deck — bay B3 | WF-FAB2-10 | FAB2 | structural | 2026-08-04T11:06:00-07:00 | 2026-08-05T08:24:00-07:00 | 7.3 | 0.73 | 5.32 |  | 12 | concrete_cip_hot_weather | True |  |  |
| A-1094 | FAB2.FAB.10 | Slab finish & curing compound — FAB2 L3 deck — bay B3 | WF-FAB2-10 | FAB2 | structural | 2026-08-05T08:24:00-07:00 | 2026-08-06T07:12:00-07:00 | 8.8 | 0.88 | 5.32 |  | 6 |  |  |  |  |
| A-1095 | FAB2.FAB.10 | Structural steel erection — FAB2 L3 deck — bay B3 | WF-FAB2-10 | FAB2 | structural | 2026-08-11T15:12:00-07:00 | 2026-08-17T11:36:00-07:00 | 46.4 | 4.64 | 5.32 |  | 10 |  |  |  |  |
| A-1096 | FAB2.FAB.10 | Deck weld & shear stud installation — FAB2 L3 deck — bay B3 | WF-FAB2-10 | FAB2 | structural | 2026-08-17T11:36:00-07:00 | 2026-08-18T10:48:00-07:00 | 9.2 | 0.92 | 5.32 |  | 4 | structural_welding_preheat | True |  |  |
| A-1097 | FAB2.FAB.10 | Adhesive anchor installation — FAB2 L3 deck — bay B3 | WF-FAB2-10 | FAB2 | structural | 2026-08-18T10:48:00-07:00 | 2026-08-18T15:36:00-07:00 | 4.8 | 0.48 | 5.32 |  | 3 | adhesive_anchor_epoxy | True |  |  |
| A-1098 | FAB2.FAB.10 | Spray-applied fireproofing — FAB2 L3 deck — bay B3 | WF-FAB2-10 | FAB2 | structural | 2026-08-24T14:48:00-07:00 | 2026-08-26T06:42:00-07:00 | 11.9 | 1.19 | 1.2 | True | 6 | sfrm_spray_applied_fireproofing | True |  | True |
| A-1099 | FAB2.FAB.10 | Structural steel high-build coating — FAB2 L3 deck — bay B3 | WF-FAB2-10 | FAB2 | structural | 2026-08-28T10:42:00-07:00 | 2026-08-29T07:12:00-07:00 | 6.5 | 0.65 | 110.02 |  | 5 | coating_epoxy_structural_steel | True |  |  |
| A-1100 | FAB2.FAB.10 | MEP hanger & rough-in — FAB2 L3 deck — bay B3 | WF-FAB2-10 | FAB2 | mechanical | 2026-08-29T07:12:00-07:00 | 2026-09-01T13:12:00-07:00 | 26 | 2.6 | 110.02 |  | 8 |  |  |  |  |
| A-1101 | FAB2.FAB.11 | Layout & survey control — FAB2 L3 deck — bay C3 | WF-FAB2-11 | FAB2 | civil | 2026-07-30T13:00:00-07:00 | 2026-07-31T14:48:00-07:00 | 11.8 | 1.18 | 6.39 |  | 3 |  |  |  |  |
| A-1102 | FAB2.FAB.11 | Formwork & rebar placement — FAB2 L3 deck — bay C3 | WF-FAB2-11 | FAB2 | structural | 2026-07-31T14:48:00-07:00 | 2026-08-05T07:18:00-07:00 | 32.5 | 3.25 | 6.39 |  | 9 |  |  |  |  |
| A-1103 | FAB2.FAB.11 | Slab pour — FAB2 L3 deck — bay C3 | WF-FAB2-11 | FAB2 | structural | 2026-08-05T07:18:00-07:00 | 2026-08-05T14:36:00-07:00 | 7.3 | 0.73 | 6.39 |  | 12 | concrete_cip_hot_weather | True |  |  |
| A-1104 | FAB2.FAB.11 | Slab finish & curing compound — FAB2 L3 deck — bay C3 | WF-FAB2-11 | FAB2 | structural | 2026-08-05T14:36:00-07:00 | 2026-08-07T06:18:00-07:00 | 11.7 | 1.17 | 6.39 |  | 6 |  |  |  |  |
| A-1105 | FAB2.FAB.11 | Structural steel erection — FAB2 L3 deck — bay C3 | WF-FAB2-11 | FAB2 | structural | 2026-08-12T14:18:00-07:00 | 2026-08-17T11:00:00-07:00 | 36.7 | 3.67 | 6.39 |  | 10 |  |  |  |  |
| A-1106 | FAB2.FAB.11 | Deck weld & shear stud installation — FAB2 L3 deck — bay C3 | WF-FAB2-11 | FAB2 | structural | 2026-08-17T11:00:00-07:00 | 2026-08-18T09:36:00-07:00 | 8.6 | 0.86 | 6.39 |  | 4 | structural_welding_preheat | True |  |  |
| A-1107 | FAB2.FAB.11 | Adhesive anchor installation — FAB2 L3 deck — bay C3 | WF-FAB2-11 | FAB2 | structural | 2026-08-18T09:36:00-07:00 | 2026-08-18T14:54:00-07:00 | 5.3 | 0.53 | 6.39 |  | 3 | adhesive_anchor_epoxy | True |  |  |
| A-1108 | FAB2.FAB.11 | Spray-applied fireproofing — FAB2 L3 deck — bay C3 | WF-FAB2-11 | FAB2 | structural | 2026-08-25T14:48:00-07:00 | 2026-08-27T06:24:00-07:00 | 11.6 | 1.16 | 1.2 | True | 6 | sfrm_spray_applied_fireproofing | True |  | True |
| A-1109 | FAB2.FAB.11 | Structural steel high-build coating — FAB2 L3 deck — bay C3 | WF-FAB2-11 | FAB2 | structural | 2026-08-29T10:24:00-07:00 | 2026-08-31T07:06:00-07:00 | 6.7 | 0.67 | 108.84 |  | 5 | coating_epoxy_structural_steel | True |  |  |
| A-1110 | FAB2.FAB.11 | MEP hanger & rough-in — FAB2 L3 deck — bay C3 | WF-FAB2-11 | FAB2 | mechanical | 2026-08-31T07:06:00-07:00 | 2026-09-02T15:00:00-07:00 | 27.9 | 2.79 | 108.84 |  | 8 |  |  |  |  |
| A-1111 | FAB2.FAB.12 | Layout & survey control — FAB2 L3 deck — bay D3 | WF-FAB2-12 | FAB2 | civil | 2026-07-31T11:54:00-07:00 | 2026-08-01T12:18:00-07:00 | 10.4 | 1.04 | 6.99 |  | 3 |  |  |  |  |
| A-1112 | FAB2.FAB.12 | Formwork & rebar placement — FAB2 L3 deck — bay D3 | WF-FAB2-12 | FAB2 | structural | 2026-08-01T12:18:00-07:00 | 2026-08-05T10:00:00-07:00 | 27.7 | 2.77 | 6.99 |  | 9 |  |  |  |  |
| A-1113 | FAB2.FAB.12 | Slab pour — FAB2 L3 deck — bay D3 | WF-FAB2-12 | FAB2 | structural | 2026-08-05T10:00:00-07:00 | 2026-08-06T08:54:00-07:00 | 8.9 | 0.89 | 6.99 |  | 12 | concrete_cip_hot_weather | True |  |  |
| A-1114 | FAB2.FAB.12 | Slab finish & curing compound — FAB2 L3 deck — bay D3 | WF-FAB2-12 | FAB2 | structural | 2026-08-06T08:54:00-07:00 | 2026-08-07T09:54:00-07:00 | 11 | 1.1 | 6.99 |  | 6 |  |  |  |  |
| A-1115 | FAB2.FAB.12 | Structural steel erection — FAB2 L3 deck — bay D3 | WF-FAB2-12 | FAB2 | structural | 2026-08-13T07:54:00-07:00 | 2026-08-17T15:12:00-07:00 | 37.3 | 3.73 | 6.99 |  | 10 |  |  |  |  |
| A-1116 | FAB2.FAB.12 | Deck weld & shear stud installation — FAB2 L3 deck — bay D3 | WF-FAB2-12 | FAB2 | structural | 2026-08-17T15:12:00-07:00 | 2026-08-18T12:54:00-07:00 | 7.7 | 0.77 | 6.99 |  | 4 | structural_welding_preheat | True |  |  |
| A-1117 | FAB2.FAB.12 | Adhesive anchor installation — FAB2 L3 deck — bay D3 | WF-FAB2-12 | FAB2 | structural | 2026-08-18T12:54:00-07:00 | 2026-08-19T08:54:00-07:00 | 6 | 0.6 | 6.99 |  | 3 | adhesive_anchor_epoxy | True |  |  |
| A-1118 | FAB2.FAB.12 | Spray-applied fireproofing — FAB2 L3 deck — bay D3 | WF-FAB2-12 | FAB2 | structural | 2026-08-26T14:48:00-07:00 | 2026-08-27T15:54:00-07:00 | 11.1 | 1.11 | 1.2 | True | 6 | sfrm_spray_applied_fireproofing | True |  | True |
| A-1119 | FAB2.FAB.12 | Structural steel high-build coating — FAB2 L3 deck — bay D3 | WF-FAB2-12 | FAB2 | structural | 2026-08-31T09:54:00-07:00 | 2026-09-01T06:36:00-07:00 | 6.7 | 0.67 | 107.35 |  | 5 | coating_epoxy_structural_steel | True |  |  |
| A-1120 | FAB2.FAB.12 | MEP hanger & rough-in — FAB2 L3 deck — bay D3 | WF-FAB2-12 | FAB2 | mechanical | 2026-09-01T06:36:00-07:00 | 2026-09-04T09:54:00-07:00 | 33.3 | 3.33 | 107.35 |  | 8 |  |  |  |  |
| A-1121 | FAB2.FAB.13 | Layout & survey control — FAB2 Perimeter facade — bay A4 | WF-FAB2-13 | FAB2 | civil | 2026-07-29T06:24:00-07:00 | 2026-07-29T15:00:00-07:00 | 8.6 | 0.86 | 9.18 |  | 3 |  |  |  |  |
| A-1122 | FAB2.FAB.13 | Formwork & rebar placement — FAB2 Perimeter facade — bay A4 | WF-FAB2-13 | FAB2 | structural | 2026-07-29T15:00:00-07:00 | 2026-08-03T09:12:00-07:00 | 34.2 | 3.42 | 9.18 |  | 9 |  |  |  |  |
| A-1123 | FAB2.FAB.13 | Slab pour — FAB2 Perimeter facade — bay A4 | WF-FAB2-13 | FAB2 | structural | 2026-08-03T09:12:00-07:00 | 2026-08-04T08:42:00-07:00 | 9.5 | 0.95 | 9.18 |  | 12 | concrete_cip_hot_weather | True |  |  |
| A-1124 | FAB2.FAB.13 | Slab finish & curing compound — FAB2 Perimeter facade — bay A4 | WF-FAB2-13 | FAB2 | structural | 2026-08-04T08:42:00-07:00 | 2026-08-05T08:18:00-07:00 | 9.6 | 0.96 | 9.18 |  | 6 |  |  |  |  |
| A-1125 | FAB2.FAB.13 | Structural steel erection — FAB2 Perimeter facade — bay A4 | WF-FAB2-13 | FAB2 | structural | 2026-08-11T06:18:00-07:00 | 2026-08-15T13:24:00-07:00 | 47.1 | 4.71 | 9.18 |  | 10 |  |  |  |  |
| A-1126 | FAB2.FAB.13 | Deck weld & shear stud installation — FAB2 Perimeter facade — bay A4 | WF-FAB2-13 | FAB2 | structural | 2026-08-15T13:24:00-07:00 | 2026-08-17T11:12:00-07:00 | 7.8 | 0.78 | 9.18 |  | 4 | structural_welding_preheat | True |  |  |
| A-1127 | FAB2.FAB.13 | Adhesive anchor installation — FAB2 Perimeter facade — bay A4 | WF-FAB2-13 | FAB2 | structural | 2026-08-17T11:12:00-07:00 | 2026-08-18T07:00:00-07:00 | 5.8 | 0.58 | 9.18 |  | 3 | adhesive_anchor_epoxy | True |  |  |
| A-1128 | FAB2.FAB.13 | Spray-applied fireproofing — FAB2 Perimeter facade — bay A4 | WF-FAB2-13 | FAB2 | structural | 2026-08-27T14:48:00-07:00 | 2026-08-28T14:18:00-07:00 | 9.5 | 0.95 | 1.2 | True | 6 | sfrm_spray_applied_fireproofing | True |  |  |
| A-1129 | FAB2.FAB.13 | Structural steel high-build coating — FAB2 Perimeter facade — bay A4 | WF-FAB2-13 | FAB2 | structural | 2026-09-01T08:18:00-07:00 | 2026-09-01T14:48:00-07:00 | 6.5 | 0.65 | 107.01 |  | 5 | coating_epoxy_structural_steel | True |  |  |
| A-1130 | FAB2.FAB.13 | MEP hanger & rough-in — FAB2 Perimeter facade — bay A4 | WF-FAB2-13 | FAB2 | mechanical | 2026-09-01T14:48:00-07:00 | 2026-09-04T13:18:00-07:00 | 28.5 | 2.85 | 107.01 |  | 8 |  |  |  |  |
| A-1131 | FAB2.FAB.14 | Layout & survey control — FAB2 Perimeter facade — bay B4 | WF-FAB2-14 | FAB2 | civil | 2026-07-30T13:48:00-07:00 | 2026-07-31T12:36:00-07:00 | 8.8 | 0.88 | 9.76 |  | 3 |  |  |  |  |
| A-1132 | FAB2.FAB.14 | Formwork & rebar placement — FAB2 Perimeter facade — bay B4 | WF-FAB2-14 | FAB2 | structural | 2026-07-31T12:36:00-07:00 | 2026-08-04T15:18:00-07:00 | 32.7 | 3.27 | 9.76 |  | 9 |  |  |  |  |
| A-1133 | FAB2.FAB.14 | Slab pour — FAB2 Perimeter facade — bay B4 | WF-FAB2-14 | FAB2 | structural | 2026-08-04T15:18:00-07:00 | 2026-08-05T14:30:00-07:00 | 9.2 | 0.92 | 9.76 |  | 12 | concrete_cip_hot_weather | True |  |  |
| A-1134 | FAB2.FAB.14 | Slab finish & curing compound — FAB2 Perimeter facade — bay B4 | WF-FAB2-14 | FAB2 | structural | 2026-08-05T14:30:00-07:00 | 2026-08-06T15:00:00-07:00 | 10.5 | 1.05 | 9.76 |  | 6 |  |  |  |  |
| A-1135 | FAB2.FAB.14 | Structural steel erection — FAB2 Perimeter facade — bay B4 | WF-FAB2-14 | FAB2 | structural | 2026-08-12T13:00:00-07:00 | 2026-08-17T07:18:00-07:00 | 34.3 | 3.43 | 9.76 |  | 10 |  |  |  |  |
| A-1136 | FAB2.FAB.14 | Deck weld & shear stud installation — FAB2 Perimeter facade — bay B4 | WF-FAB2-14 | FAB2 | structural | 2026-08-17T07:18:00-07:00 | 2026-08-17T15:30:00-07:00 | 8.2 | 0.82 | 9.76 |  | 4 | structural_welding_preheat | True |  |  |
| A-1137 | FAB2.FAB.14 | Adhesive anchor installation — FAB2 Perimeter facade — bay B4 | WF-FAB2-14 | FAB2 | structural | 2026-08-17T15:30:00-07:00 | 2026-08-18T11:12:00-07:00 | 5.7 | 0.57 | 9.76 |  | 3 | adhesive_anchor_epoxy | True |  |  |
| A-1138 | FAB2.FAB.14 | Spray-applied fireproofing — FAB2 Perimeter facade — bay B4 | WF-FAB2-14 | FAB2 | structural | 2026-08-28T14:48:00-07:00 | 2026-08-29T14:24:00-07:00 | 9.6 | 0.96 | 1.2 | True | 6 | sfrm_spray_applied_fireproofing | True |  |  |
| A-1139 | FAB2.FAB.14 | Structural steel high-build coating — FAB2 Perimeter facade — bay B4 | WF-FAB2-14 | FAB2 | structural | 2026-09-02T08:24:00-07:00 | 2026-09-02T14:18:00-07:00 | 5.9 | 0.59 | 1.2 | True | 5 | coating_epoxy_structural_steel | True |  |  |
| A-1140 | FAB2.FAB.14 | MEP hanger & rough-in — FAB2 Perimeter facade — bay B4 | WF-FAB2-14 | FAB2 | mechanical | 2026-09-02T14:18:00-07:00 | 2026-09-05T12:12:00-07:00 | 27.9 | 2.79 | 1.2 | True | 8 |  |  |  |  |

| id | wbs | name | work_face_id | structure_id | discipline | planned_start | planned_finish | duration_h | duration_d | total_float_d | crew_size | trade_id | thermal_sensitive | hold_point | in_demo_window |
| --- | --- | --- | --- | --- | --- | --- | --- | --- | --- | --- | --- | --- | --- | --- | --- |
| A-1141 | CUB.YARD.01 | Excavation & subgrade prep — CUB grade — bay A1 | WF-CUB-01 | CUB | sitework | 2026-08-14T13:00:00-07:00 | 2026-08-17T15:54:00-07:00 | 22.9 | 2.29 | 94.47 | 5 |  |  |  |  |
| A-1142 | CUB.YARD.01 | Equipment pad pour — CUB grade — bay A1 | WF-CUB-01 | CUB | structural | 2026-08-17T15:54:00-07:00 | 2026-08-18T14:30:00-07:00 | 8.6 | 0.86 | 94.47 | 10 | concrete_cip_hot_weather | True |  |  |
| A-1143 | CUB.YARD.01 | Anchor bolt & adhesive anchor set — CUB grade — bay A1 | WF-CUB-01 | CUB | structural | 2026-08-21T08:30:00-07:00 | 2026-08-21T13:36:00-07:00 | 5.1 | 0.51 | 94.47 | 3 | adhesive_anchor_epoxy | True |  |  |
| A-1144 | CUB.YARD.01 | Equipment set & alignment — CUB grade — bay A1 | WF-CUB-01 | CUB | mechanical | 2026-08-21T13:36:00-07:00 | 2026-08-25T14:48:00-07:00 | 31.2 | 3.12 | 94.47 | 6 |  |  |  | True |
| A-1145 | CUB.YARD.01 | Pipe rack erection — CUB grade — bay A1 | WF-CUB-01 | CUB | mechanical | 2026-08-25T14:48:00-07:00 | 2026-08-27T13:18:00-07:00 | 18.5 | 1.85 | 94.47 | 6 |  |  |  | True |
| A-1146 | CUB.YARD.01 | Pipe rack & equipment coating — CUB grade — bay A1 | WF-CUB-01 | CUB | mechanical | 2026-08-27T13:18:00-07:00 | 2026-08-28T08:48:00-07:00 | 5.5 | 0.55 | 94.47 | 4 | coating_epoxy_structural_steel | True |  |  |
| A-1147 | CUB.YARD.01 | Conduit, grounding & terminations — CUB grade — bay A1 | WF-CUB-01 | CUB | electrical | 2026-08-29T09:18:00-07:00 | 2026-09-02T12:18:00-07:00 | 33 | 3.3 | 94.47 | 6 |  |  |  |  |
| A-1148 | CUB.YARD.02 | Excavation & subgrade prep — CUB grade — bay B1 | WF-CUB-02 | CUB | sitework | 2026-08-14T11:00:00-07:00 | 2026-08-17T14:48:00-07:00 | 23.8 | 2.38 | 109.89 | 5 |  |  |  |  |
| A-1149 | CUB.YARD.02 | Equipment pad pour — CUB grade — bay B1 | WF-CUB-02 | CUB | structural | 2026-08-17T14:48:00-07:00 | 2026-08-18T12:18:00-07:00 | 7.5 | 0.75 | 109.89 | 10 | concrete_cip_hot_weather | True |  |  |
| A-1150 | CUB.YARD.02 | Anchor bolt & adhesive anchor set — CUB grade — bay B1 | WF-CUB-02 | CUB | structural | 2026-08-21T06:18:00-07:00 | 2026-08-21T10:36:00-07:00 | 4.3 | 0.43 | 109.89 | 3 | adhesive_anchor_epoxy | True |  |  |
| A-1151 | CUB.YARD.02 | Equipment set & alignment — CUB grade — bay B1 | WF-CUB-02 | CUB | mechanical | 2026-08-21T10:36:00-07:00 | 2026-08-25T08:12:00-07:00 | 27.6 | 2.76 | 109.89 | 6 |  |  |  | True |
| A-1152 | CUB.YARD.02 | Pipe rack erection — CUB grade — bay B1 | WF-CUB-02 | CUB | mechanical | 2026-08-25T08:12:00-07:00 | 2026-08-27T11:12:00-07:00 | 23 | 2.3 | 109.89 | 6 |  |  |  | True |
| A-1153 | CUB.YARD.02 | Pipe rack & equipment coating — CUB grade — bay B1 | WF-CUB-02 | CUB | mechanical | 2026-08-27T11:12:00-07:00 | 2026-08-28T08:24:00-07:00 | 7.2 | 0.72 | 109.89 | 4 | coating_epoxy_structural_steel | True |  |  |
| A-1154 | CUB.YARD.02 | Conduit, grounding & terminations — CUB grade — bay B1 | WF-CUB-02 | CUB | electrical | 2026-08-29T07:12:00-07:00 | 2026-09-01T14:30:00-07:00 | 27.3 | 2.73 | 109.89 | 6 |  |  |  |  |
| A-1155 | CUB.YARD.03 | Excavation & subgrade prep — CUB grade — bay C1 | WF-CUB-03 | CUB | sitework | 2026-08-15T11:00:00-07:00 | 2026-08-18T09:12:00-07:00 | 18.2 | 1.82 | 109.92 | 5 |  |  |  |  |
| A-1156 | CUB.YARD.03 | Equipment pad pour — CUB grade — bay C1 | WF-CUB-03 | CUB | structural | 2026-08-18T09:12:00-07:00 | 2026-08-19T07:18:00-07:00 | 8.1 | 0.81 | 109.92 | 10 | concrete_cip_hot_weather | True |  |  |
| A-1157 | CUB.YARD.03 | Anchor bolt & adhesive anchor set — CUB grade — bay C1 | WF-CUB-03 | CUB | structural | 2026-08-21T11:18:00-07:00 | 2026-08-22T06:18:00-07:00 | 5 | 0.5 | 109.92 | 3 | adhesive_anchor_epoxy | True |  |  |
| A-1158 | CUB.YARD.03 | Equipment set & alignment — CUB grade — bay C1 | WF-CUB-03 | CUB | mechanical | 2026-08-22T06:18:00-07:00 | 2026-08-25T14:12:00-07:00 | 27.9 | 2.79 | 109.92 | 6 |  |  |  | True |
| A-1159 | CUB.YARD.03 | Pipe rack erection — CUB grade — bay C1 | WF-CUB-03 | CUB | mechanical | 2026-08-25T14:12:00-07:00 | 2026-08-27T11:48:00-07:00 | 17.6 | 1.76 | 109.92 | 6 |  |  |  | True |
| A-1160 | CUB.YARD.03 | Pipe rack & equipment coating — CUB grade — bay C1 | WF-CUB-03 | CUB | mechanical | 2026-08-27T11:48:00-07:00 | 2026-08-28T07:24:00-07:00 | 5.6 | 0.56 | 109.92 | 4 | coating_epoxy_structural_steel | True |  |  |
| A-1161 | CUB.YARD.03 | Conduit, grounding & terminations — CUB grade — bay C1 | WF-CUB-03 | CUB | electrical | 2026-08-29T07:48:00-07:00 | 2026-09-01T14:12:00-07:00 | 26.4 | 2.64 | 109.92 | 6 |  |  |  |  |
| A-1162 | CUB.YARD.04 | Excavation & subgrade prep — CUB L2 — bay A2 | WF-CUB-04 | CUB | sitework | 2026-08-15T07:00:00-07:00 | 2026-08-17T15:12:00-07:00 | 18.2 | 1.82 | 109.12 | 5 |  |  |  |  |
| A-1163 | CUB.YARD.04 | Equipment pad pour — CUB L2 — bay A2 | WF-CUB-04 | CUB | structural | 2026-08-17T15:12:00-07:00 | 2026-08-18T12:42:00-07:00 | 7.5 | 0.75 | 109.12 | 10 | concrete_cip_hot_weather | True |  |  |
| A-1164 | CUB.YARD.04 | Anchor bolt & adhesive anchor set — CUB L2 — bay A2 | WF-CUB-04 | CUB | structural | 2026-08-21T06:42:00-07:00 | 2026-08-21T11:06:00-07:00 | 4.4 | 0.44 | 109.12 | 3 | adhesive_anchor_epoxy | True |  |  |
| A-1165 | CUB.YARD.04 | Equipment set & alignment — CUB L2 — bay A2 | WF-CUB-04 | CUB | mechanical | 2026-08-21T11:06:00-07:00 | 2026-08-25T11:48:00-07:00 | 30.7 | 3.07 | 109.12 | 6 |  |  |  | True |
| A-1166 | CUB.YARD.04 | Pipe rack erection — CUB L2 — bay A2 | WF-CUB-04 | CUB | mechanical | 2026-08-25T11:48:00-07:00 | 2026-08-27T15:06:00-07:00 | 23.3 | 2.33 | 109.12 | 6 |  |  |  | True |
| A-1167 | CUB.YARD.04 | Pipe rack & equipment coating — CUB L2 — bay A2 | WF-CUB-04 | CUB | mechanical | 2026-08-27T15:06:00-07:00 | 2026-08-28T11:00:00-07:00 | 5.9 | 0.59 | 109.12 | 4 | coating_epoxy_structural_steel | True |  |  |
| A-1168 | CUB.YARD.04 | Conduit, grounding & terminations — CUB L2 — bay A2 | WF-CUB-04 | CUB | electrical | 2026-08-29T11:06:00-07:00 | 2026-09-02T12:12:00-07:00 | 31.1 | 3.11 | 109.12 | 6 |  |  |  |  |
| A-1169 | CUB.YARD.05 | Excavation & subgrade prep — CUB L2 — bay B2 | WF-CUB-05 | CUB | sitework | 2026-08-15T13:00:00-07:00 | 2026-08-18T15:54:00-07:00 | 22.9 | 2.29 | 108.43 | 5 |  |  |  |  |
| A-1170 | CUB.YARD.05 | Equipment pad pour — CUB L2 — bay B2 | WF-CUB-05 | CUB | structural | 2026-08-18T15:54:00-07:00 | 2026-08-19T13:36:00-07:00 | 7.7 | 0.77 | 108.43 | 10 | concrete_cip_hot_weather | True | City of Phoenix inspector — reinforcing & embed inspection prior to pour |  |
| A-1171 | CUB.YARD.05 | Anchor bolt & adhesive anchor set — CUB L2 — bay B2 | WF-CUB-05 | CUB | structural | 2026-08-22T07:36:00-07:00 | 2026-08-22T12:12:00-07:00 | 4.6 | 0.46 | 108.43 | 3 | adhesive_anchor_epoxy | True |  |  |
| A-1172 | CUB.YARD.05 | Equipment set & alignment — CUB L2 — bay B2 | WF-CUB-05 | CUB | mechanical | 2026-08-22T12:12:00-07:00 | 2026-08-26T12:06:00-07:00 | 29.9 | 2.99 | 108.43 | 6 |  |  |  | True |
| A-1173 | CUB.YARD.05 | Pipe rack erection — CUB L2 — bay B2 | WF-CUB-05 | CUB | mechanical | 2026-08-26T12:06:00-07:00 | 2026-08-28T12:12:00-07:00 | 20.1 | 2.01 | 108.43 | 6 |  |  |  | True |
| A-1174 | CUB.YARD.05 | Pipe rack & equipment coating — CUB L2 — bay B2 | WF-CUB-05 | CUB | mechanical | 2026-08-28T12:12:00-07:00 | 2026-08-29T07:54:00-07:00 | 5.7 | 0.57 | 108.43 | 4 | coating_epoxy_structural_steel | True |  |  |
| A-1175 | CUB.YARD.05 | Conduit, grounding & terminations — CUB L2 — bay B2 | WF-CUB-05 | CUB | electrical | 2026-08-31T08:12:00-07:00 | 2026-09-03T09:06:00-07:00 | 30.9 | 3.09 | 108.43 | 6 |  |  |  |  |
| A-1176 | WHSE.WAREHOUSE.01 | Subgrade & vapour barrier — WHSE grade — bay A1 | WF-WHSE-01 | WHSE | sitework | 2026-08-05T10:00:00-07:00 | 2026-08-07T08:06:00-07:00 | 18.1 | 1.81 | 99.86 | 5 |  |  |  |  |
| A-1177 | WHSE.WAREHOUSE.01 | Slab on grade pour — WHSE grade — bay A1 | WF-WHSE-01 | WHSE | structural | 2026-08-07T08:06:00-07:00 | 2026-08-08T06:06:00-07:00 | 8 | 0.8 | 99.86 | 12 | concrete_cip_hot_weather | True |  |  |
| A-1178 | WHSE.WAREHOUSE.01 | Precast panel erection — WHSE grade — bay A1 | WF-WHSE-01 | WHSE | structural | 2026-08-17T08:06:00-07:00 | 2026-08-20T12:54:00-07:00 | 34.8 | 3.48 | 99.86 | 8 |  |  |  |  |
| A-1179 | WHSE.WAREHOUSE.01 | Connection weld — WHSE grade — bay A1 | WF-WHSE-01 | WHSE | structural | 2026-08-20T12:54:00-07:00 | 2026-08-21T10:54:00-07:00 | 8 | 0.8 | 99.86 | 4 | structural_welding_preheat | True |  |  |
| A-1180 | WHSE.WAREHOUSE.01 | Panel joint sealant — WHSE grade — bay A1 | WF-WHSE-01 | WHSE | architectural | 2026-08-21T10:54:00-07:00 | 2026-08-22T08:00:00-07:00 | 7.1 | 0.71 | 99.86 | 4 | sealant_silicone_weatherseal | True |  |  |
| A-1181 | WHSE.WAREHOUSE.01 | Spray-applied fireproofing — WHSE grade — bay A1 | WF-WHSE-01 | WHSE | structural | 2026-08-22T08:00:00-07:00 | 2026-08-24T09:06:00-07:00 | 11.1 | 1.11 | 99.86 | 6 | sfrm_spray_applied_fireproofing | True |  | True |
| A-1182 | WHSE.WAREHOUSE.01 | Interior floor marking — WHSE grade — bay A1 | WF-WHSE-01 | WHSE | architectural | 2026-08-26T13:06:00-07:00 | 2026-08-27T08:24:00-07:00 | 5.3 | 0.53 | 99.86 | 4 | pavement_marking_waterborne | True |  | True |
| A-1183 | WHSE.WAREHOUSE.02 | Subgrade & vapour barrier — WHSE grade — bay B1 | WF-WHSE-02 | WHSE | sitework | 2026-08-07T06:00:00-07:00 | 2026-08-08T13:54:00-07:00 | 17.9 | 1.79 | 113.16 | 5 |  |  |  |  |
| A-1184 | WHSE.WAREHOUSE.02 | Slab on grade pour — WHSE grade — bay B1 | WF-WHSE-02 | WHSE | structural | 2026-08-08T13:54:00-07:00 | 2026-08-10T13:12:00-07:00 | 9.3 | 0.93 | 113.16 | 12 | concrete_cip_hot_weather | True |  |  |
| A-1185 | WHSE.WAREHOUSE.02 | Precast panel erection — WHSE grade — bay B1 | WF-WHSE-02 | WHSE | structural | 2026-08-18T15:12:00-07:00 | 2026-08-22T09:06:00-07:00 | 33.9 | 3.39 | 113.16 | 8 |  |  |  |  |
| A-1186 | WHSE.WAREHOUSE.02 | Connection weld — WHSE grade — bay B1 | WF-WHSE-02 | WHSE | structural | 2026-08-22T09:06:00-07:00 | 2026-08-24T06:12:00-07:00 | 7.1 | 0.71 | 113.16 | 4 | structural_welding_preheat | True |  | True |
| A-1187 | WHSE.WAREHOUSE.02 | Panel joint sealant — WHSE grade — bay B1 | WF-WHSE-02 | WHSE | architectural | 2026-08-24T06:12:00-07:00 | 2026-08-24T12:18:00-07:00 | 6.1 | 0.61 | 113.16 | 4 | sealant_silicone_weatherseal | True |  | True |
| A-1188 | WHSE.WAREHOUSE.02 | Spray-applied fireproofing — WHSE grade — bay B1 | WF-WHSE-02 | WHSE | structural | 2026-08-24T12:18:00-07:00 | 2026-08-25T12:18:00-07:00 | 10 | 1 | 113.16 | 6 | sfrm_spray_applied_fireproofing | True |  | True |
| A-1189 | WHSE.WAREHOUSE.02 | Interior floor marking — WHSE grade — bay B1 | WF-WHSE-02 | WHSE | architectural | 2026-08-28T06:18:00-07:00 | 2026-08-28T11:48:00-07:00 | 5.5 | 0.55 | 113.16 | 4 | pavement_marking_waterborne | True |  |  |
| A-1190 | WHSE.WAREHOUSE.03 | Subgrade & vapour barrier — WHSE grade — bay A2 | WF-WHSE-03 | WHSE | sitework | 2026-08-07T10:00:00-07:00 | 2026-08-08T15:54:00-07:00 | 15.9 | 1.59 | 113.36 | 5 |  |  |  |  |
| A-1191 | WHSE.WAREHOUSE.03 | Slab on grade pour — WHSE grade — bay A2 | WF-WHSE-03 | WHSE | structural | 2026-08-08T15:54:00-07:00 | 2026-08-10T13:18:00-07:00 | 7.4 | 0.74 | 113.36 | 12 | concrete_cip_hot_weather | True |  |  |
| A-1192 | WHSE.WAREHOUSE.03 | Precast panel erection — WHSE grade — bay A2 | WF-WHSE-03 | WHSE | structural | 2026-08-18T15:18:00-07:00 | 2026-08-21T15:30:00-07:00 | 30.2 | 3.02 | 113.36 | 8 |  |  |  |  |
| A-1193 | WHSE.WAREHOUSE.03 | Connection weld — WHSE grade — bay A2 | WF-WHSE-03 | WHSE | structural | 2026-08-21T15:30:00-07:00 | 2026-08-22T14:12:00-07:00 | 8.7 | 0.87 | 113.36 | 4 | structural_welding_preheat | True |  |  |
| A-1194 | WHSE.WAREHOUSE.03 | Panel joint sealant — WHSE grade — bay A2 | WF-WHSE-03 | WHSE | architectural | 2026-08-22T14:12:00-07:00 | 2026-08-24T10:36:00-07:00 | 6.4 | 0.64 | 113.36 | 4 | sealant_silicone_weatherseal | True |  | True |
| A-1195 | WHSE.WAREHOUSE.03 | Spray-applied fireproofing — WHSE grade — bay A2 | WF-WHSE-03 | WHSE | structural | 2026-08-24T10:36:00-07:00 | 2026-08-25T11:06:00-07:00 | 10.5 | 1.05 | 113.36 | 6 | sfrm_spray_applied_fireproofing | True |  | True |
| A-1196 | WHSE.WAREHOUSE.03 | Interior floor marking — WHSE grade — bay A2 | WF-WHSE-03 | WHSE | architectural | 2026-08-27T15:06:00-07:00 | 2026-08-28T09:48:00-07:00 | 4.7 | 0.47 | 113.36 | 4 | pavement_marking_waterborne | True |  |  |
| A-1197 | WHSE.WAREHOUSE.04 | Subgrade & vapour barrier — WHSE grade — bay B2 | WF-WHSE-04 | WHSE | sitework | 2026-08-07T11:00:00-07:00 | 2026-08-10T06:42:00-07:00 | 15.7 | 1.57 | 113.4 | 5 |  |  |  |  |
| A-1198 | WHSE.WAREHOUSE.04 | Slab on grade pour — WHSE grade — bay B2 | WF-WHSE-04 | WHSE | structural | 2026-08-10T06:42:00-07:00 | 2026-08-10T15:48:00-07:00 | 9.1 | 0.91 | 113.4 | 12 | concrete_cip_hot_weather | True |  |  |
| A-1199 | WHSE.WAREHOUSE.04 | Precast panel erection — WHSE grade — bay B2 | WF-WHSE-04 | WHSE | structural | 2026-08-19T07:48:00-07:00 | 2026-08-21T13:48:00-07:00 | 26 | 2.6 | 113.4 | 8 |  |  |  |  |
| A-1200 | WHSE.WAREHOUSE.04 | Connection weld — WHSE grade — bay B2 | WF-WHSE-04 | WHSE | structural | 2026-08-21T13:48:00-07:00 | 2026-08-22T12:12:00-07:00 | 8.4 | 0.84 | 113.4 | 4 | structural_welding_preheat | True |  |  |
| A-1201 | WHSE.WAREHOUSE.04 | Panel joint sealant — WHSE grade — bay B2 | WF-WHSE-04 | WHSE | architectural | 2026-08-22T12:12:00-07:00 | 2026-08-24T10:18:00-07:00 | 8.1 | 0.81 | 113.4 | 4 | sealant_silicone_weatherseal | True |  | True |
| A-1202 | WHSE.WAREHOUSE.04 | Spray-applied fireproofing — WHSE grade — bay B2 | WF-WHSE-04 | WHSE | structural | 2026-08-24T10:18:00-07:00 | 2026-08-25T10:54:00-07:00 | 10.6 | 1.06 | 113.4 | 6 | sfrm_spray_applied_fireproofing | True |  | True |
| A-1203 | WHSE.WAREHOUSE.04 | Interior floor marking — WHSE grade — bay B2 | WF-WHSE-04 | WHSE | architectural | 2026-08-27T14:54:00-07:00 | 2026-08-28T09:24:00-07:00 | 4.5 | 0.45 | 113.4 | 4 | pavement_marking_waterborne | True |  |  |
| A-1204 | CT.YARD.01 | Excavation & subgrade prep — CT grade — bay A1 | WF-CT-01 | CT | sitework | 2026-08-19T15:00:00-07:00 | 2026-08-22T07:42:00-07:00 | 22.7 | 2.27 | 105.45 | 5 |  |  |  |  |
| A-1205 | CT.YARD.01 | Equipment pad pour — CT grade — bay A1 | WF-CT-01 | CT | structural | 2026-08-22T07:42:00-07:00 | 2026-08-24T06:54:00-07:00 | 9.2 | 0.92 | 105.45 | 10 | concrete_cip_hot_weather | True | City of Phoenix inspector — reinforcing & embed inspection prior to pour | True |
| A-1206 | CT.YARD.01 | Anchor bolt & adhesive anchor set — CT grade — bay A1 | WF-CT-01 | CT | structural | 2026-08-26T10:54:00-07:00 | 2026-08-27T06:00:00-07:00 | 5.1 | 0.51 | 105.45 | 3 | adhesive_anchor_epoxy | True |  | True |
| A-1207 | CT.YARD.01 | Equipment set & alignment — CT grade — bay A1 | WF-CT-01 | CT | mechanical | 2026-08-27T06:00:00-07:00 | 2026-08-29T11:36:00-07:00 | 25.6 | 2.56 | 105.45 | 6 |  |  |  |  |
| A-1208 | CT.YARD.01 | Pipe rack erection — CT grade — bay A1 | WF-CT-01 | CT | mechanical | 2026-08-29T11:36:00-07:00 | 2026-09-01T09:00:00-07:00 | 17.4 | 1.74 | 105.45 | 6 |  |  |  |  |
| A-1209 | CT.YARD.01 | Pipe rack & equipment coating — CT grade — bay A1 | WF-CT-01 | CT | mechanical | 2026-09-01T09:00:00-07:00 | 2026-09-01T14:24:00-07:00 | 5.4 | 0.54 | 105.45 | 4 | coating_epoxy_structural_steel | True |  |  |
| A-1210 | CT.YARD.01 | Conduit, grounding & terminations — CT grade — bay A1 | WF-CT-01 | CT | electrical | 2026-09-02T15:00:00-07:00 | 2026-09-08T08:54:00-07:00 | 33.9 | 3.39 | 105.45 | 6 |  |  |  |  |

| id | wbs | name | work_face_id | structure_id | discipline | planned_start | planned_finish | duration_h | duration_d | total_float_d | is_near_critical | crew_size | trade_id | thermal_sensitive | hold_point | in_demo_window |
| --- | --- | --- | --- | --- | --- | --- | --- | --- | --- | --- | --- | --- | --- | --- | --- | --- |
| A-1211 | CT.YARD.02 | Excavation & subgrade prep — CT grade — bay B1 | WF-CT-02 | CT | sitework | 2026-08-19T06:00:00-07:00 | 2026-08-20T13:12:00-07:00 | 17.2 | 1.72 | 105.72 |  | 5 |  |  |  |  |
| A-1212 | CT.YARD.02 | Equipment pad pour — CT grade — bay B1 | WF-CT-02 | CT | structural | 2026-08-20T13:12:00-07:00 | 2026-08-21T10:30:00-07:00 | 7.3 | 0.73 | 105.72 |  | 10 | concrete_cip_hot_weather | True |  |  |
| A-1213 | CT.YARD.02 | Anchor bolt & adhesive anchor set — CT grade — bay B1 | WF-CT-02 | CT | structural | 2026-08-24T14:30:00-07:00 | 2026-08-25T10:24:00-07:00 | 5.9 | 0.59 | 105.72 |  | 3 | adhesive_anchor_epoxy | True |  | True |
| A-1214 | CT.YARD.02 | Equipment set & alignment — CT grade — bay B1 | WF-CT-02 | CT | mechanical | 2026-08-25T10:24:00-07:00 | 2026-08-28T15:24:00-07:00 | 35 | 3.5 | 105.72 |  | 6 |  |  |  | True |
| A-1215 | CT.YARD.02 | Pipe rack erection — CT grade — bay B1 | WF-CT-02 | CT | mechanical | 2026-08-28T15:24:00-07:00 | 2026-09-01T09:00:00-07:00 | 23.6 | 2.36 | 105.72 |  | 6 |  |  |  |  |
| A-1216 | CT.YARD.02 | Pipe rack & equipment coating — CT grade — bay B1 | WF-CT-02 | CT | mechanical | 2026-09-01T09:00:00-07:00 | 2026-09-01T14:42:00-07:00 | 5.7 | 0.57 | 105.72 |  | 4 | coating_epoxy_structural_steel | True |  |  |
| A-1217 | CT.YARD.02 | Conduit, grounding & terminations — CT grade — bay B1 | WF-CT-02 | CT | electrical | 2026-09-02T15:00:00-07:00 | 2026-09-08T06:12:00-07:00 | 31.2 | 3.12 | 105.72 |  | 6 |  |  |  |  |
| A-1218 | CT.YARD.03 | Excavation & subgrade prep — CT L2 — bay A2 | WF-CT-03 | CT | sitework | 2026-08-19T07:00:00-07:00 | 2026-08-21T08:12:00-07:00 | 21.2 | 2.12 | 105.08 |  | 5 |  |  |  |  |
| A-1219 | CT.YARD.03 | Equipment pad pour — CT L2 — bay A2 | WF-CT-03 | CT | structural | 2026-08-21T08:12:00-07:00 | 2026-08-22T07:30:00-07:00 | 9.3 | 0.93 | 105.08 |  | 10 | concrete_cip_hot_weather | True |  |  |
| A-1220 | CT.YARD.03 | Anchor bolt & adhesive anchor set — CT L2 — bay A2 | WF-CT-03 | CT | structural | 2026-08-25T11:30:00-07:00 | 2026-08-26T06:00:00-07:00 | 4.5 | 0.45 | 105.08 |  | 3 | adhesive_anchor_epoxy | True |  | True |
| A-1221 | CT.YARD.03 | Equipment set & alignment — CT L2 — bay A2 | WF-CT-03 | CT | mechanical | 2026-08-26T06:00:00-07:00 | 2026-08-29T11:18:00-07:00 | 35.3 | 3.53 | 105.08 |  | 6 |  |  |  | True |
| A-1222 | CT.YARD.03 | Pipe rack erection — CT L2 — bay A2 | WF-CT-03 | CT | mechanical | 2026-08-29T11:18:00-07:00 | 2026-09-01T10:42:00-07:00 | 19.4 | 1.94 | 105.08 |  | 6 |  |  |  |  |
| A-1223 | CT.YARD.03 | Pipe rack & equipment coating — CT L2 — bay A2 | WF-CT-03 | CT | mechanical | 2026-09-01T10:42:00-07:00 | 2026-09-02T07:06:00-07:00 | 6.4 | 0.64 | 105.08 |  | 4 | coating_epoxy_structural_steel | True |  |  |
| A-1224 | CT.YARD.03 | Conduit, grounding & terminations — CT L2 — bay A2 | WF-CT-03 | CT | electrical | 2026-09-03T06:42:00-07:00 | 2026-09-08T12:36:00-07:00 | 35.9 | 3.59 | 105.08 |  | 6 |  |  |  |  |
| A-1225 | SUB.YARD.01 | Excavation & duct bank — SUB grade — bay A1 | WF-SUB-01 | SUB | sitework | 2026-08-07T15:00:00-07:00 | 2026-08-11T13:36:00-07:00 | 28.6 | 2.86 | 115.08 |  | 6 |  |  |  |  |
| A-1226 | SUB.YARD.01 | Duct bank encasement pour — SUB grade — bay A1 | WF-SUB-01 | SUB | electrical | 2026-08-11T13:36:00-07:00 | 2026-08-12T12:54:00-07:00 | 9.3 | 0.93 | 115.08 |  | 8 | concrete_cip_hot_weather | True |  |  |
| A-1227 | SUB.YARD.01 | Transformer pad pour — SUB grade — bay A1 | WF-SUB-01 | SUB | structural | 2026-08-15T06:54:00-07:00 | 2026-08-15T14:18:00-07:00 | 7.4 | 0.74 | 115.08 |  | 10 | concrete_cip_hot_weather | True |  |  |
| A-1228 | SUB.YARD.01 | Anchor & baseplate grout — SUB grade — bay A1 | WF-SUB-01 | SUB | structural | 2026-08-19T08:18:00-07:00 | 2026-08-19T14:12:00-07:00 | 5.9 | 0.59 | 115.08 |  | 3 | adhesive_anchor_epoxy | True |  |  |
| A-1229 | SUB.YARD.01 | Switchgear set — SUB grade — bay A1 | WF-SUB-01 | SUB | electrical | 2026-08-19T14:12:00-07:00 | 2026-08-21T11:36:00-07:00 | 17.4 | 1.74 | 115.08 |  | 5 |  |  |  |  |
| A-1230 | SUB.YARD.01 | Steel structure coating touch-up — SUB grade — bay A1 | WF-SUB-01 | SUB | structural | 2026-08-21T11:36:00-07:00 | 2026-08-22T07:48:00-07:00 | 6.2 | 0.62 | 115.08 |  | 4 | coating_epoxy_structural_steel | True |  |  |
| A-1231 | SUB.YARD.01 | Cable pull & termination — SUB grade — bay A1 | WF-SUB-01 | SUB | electrical | 2026-08-22T07:48:00-07:00 | 2026-08-26T12:36:00-07:00 | 34.8 | 3.48 | 115.08 |  | 6 |  |  |  | True |
| A-1232 | SUB.YARD.02 | Excavation & duct bank — SUB grade — bay B1 | WF-SUB-02 | SUB | sitework | 2026-08-10T09:00:00-07:00 | 2026-08-13T07:06:00-07:00 | 28.1 | 2.81 | 0.6 | True | 6 |  |  |  |  |
| A-1233 | SUB.YARD.02 | Duct bank encasement pour — SUB grade — bay B1 | WF-SUB-02 | SUB | electrical | 2026-08-13T07:06:00-07:00 | 2026-08-14T06:00:00-07:00 | 8.9 | 0.89 | 0.6 | True | 8 | concrete_cip_hot_weather | True |  |  |
| A-1234 | SUB.YARD.02 | Transformer pad pour — SUB grade — bay B1 | WF-SUB-02 | SUB | structural | 2026-08-17T10:00:00-07:00 | 2026-08-18T07:54:00-07:00 | 7.9 | 0.79 | 0.6 | True | 10 | concrete_cip_hot_weather | True |  |  |
| A-1235 | SUB.YARD.02 | Anchor & baseplate grout — SUB grade — bay B1 | WF-SUB-02 | SUB | structural | 2026-08-20T11:54:00-07:00 | 2026-08-21T06:36:00-07:00 | 4.7 | 0.47 | 0.6 | True | 3 | adhesive_anchor_epoxy | True |  |  |
| A-1236 | SUB.YARD.02 | Switchgear set — SUB grade — bay B1 | WF-SUB-02 | SUB | electrical | 2026-08-21T06:36:00-07:00 | 2026-08-22T14:30:00-07:00 | 17.9 | 1.79 | 0.6 | True | 5 |  |  |  |  |
| A-1237 | SUB.YARD.02 | Steel structure coating touch-up — SUB grade — bay B1 | WF-SUB-02 | SUB | structural | 2026-08-22T14:30:00-07:00 | 2026-08-24T10:48:00-07:00 | 6.3 | 0.63 | 0.6 | True | 4 | coating_epoxy_structural_steel | True |  | True |
| A-1238 | SUB.YARD.02 | Cable pull & termination — SUB grade — bay B1 | WF-SUB-02 | SUB | electrical | 2026-08-24T10:48:00-07:00 | 2026-08-28T06:42:00-07:00 | 35.9 | 3.59 | 0.6 | True | 6 |  |  |  | True |
| A-1239 | SUB.YARD.03 | Excavation & duct bank — SUB L2 — bay A2 | WF-SUB-03 | SUB | sitework | 2026-08-07T12:00:00-07:00 | 2026-08-11T08:54:00-07:00 | 26.9 | 2.69 | 114.2 |  | 6 |  |  |  |  |
| A-1240 | SUB.YARD.03 | Duct bank encasement pour — SUB L2 — bay A2 | WF-SUB-03 | SUB | electrical | 2026-08-11T08:54:00-07:00 | 2026-08-12T07:24:00-07:00 | 8.5 | 0.85 | 114.2 |  | 8 | concrete_cip_hot_weather | True |  |  |
| A-1241 | SUB.YARD.03 | Transformer pad pour — SUB L2 — bay A2 | WF-SUB-03 | SUB | structural | 2026-08-14T11:24:00-07:00 | 2026-08-15T10:18:00-07:00 | 8.9 | 0.89 | 114.2 |  | 10 | concrete_cip_hot_weather | True |  |  |
| A-1242 | SUB.YARD.03 | Anchor & baseplate grout — SUB L2 — bay A2 | WF-SUB-03 | SUB | structural | 2026-08-18T14:18:00-07:00 | 2026-08-19T08:42:00-07:00 | 4.4 | 0.44 | 114.2 |  | 3 | adhesive_anchor_epoxy | True |  |  |
| A-1243 | SUB.YARD.03 | Switchgear set — SUB L2 — bay A2 | WF-SUB-03 | SUB | electrical | 2026-08-19T08:42:00-07:00 | 2026-08-21T10:30:00-07:00 | 21.8 | 2.18 | 114.2 |  | 5 |  |  |  |  |
| A-1244 | SUB.YARD.03 | Steel structure coating touch-up — SUB L2 — bay A2 | WF-SUB-03 | SUB | structural | 2026-08-21T10:30:00-07:00 | 2026-08-22T06:30:00-07:00 | 6 | 0.6 | 114.2 |  | 4 | coating_epoxy_structural_steel | True |  |  |
| A-1245 | SUB.YARD.03 | Cable pull & termination — SUB L2 — bay A2 | WF-SUB-03 | SUB | electrical | 2026-08-22T06:30:00-07:00 | 2026-08-27T11:24:00-07:00 | 44.9 | 4.49 | 114.2 |  | 6 |  |  |  | True |
| A-1246 | BULK.CMU.01 | Footing excavation — BULK grade — bay A1 | WF-BULK-01 | BULK | sitework | 2026-08-15T11:00:00-07:00 | 2026-08-17T15:36:00-07:00 | 14.6 | 1.46 | 104.16 |  | 4 |  |  |  |  |
| A-1247 | BULK.CMU.01 | Foundation pour — BULK grade — bay A1 | WF-BULK-01 | BULK | structural | 2026-08-17T15:36:00-07:00 | 2026-08-18T14:12:00-07:00 | 8.6 | 0.86 | 104.16 |  | 10 | concrete_cip_hot_weather | True | City of Phoenix inspector — reinforcing & embed inspection prior to pour |  |
| A-1248 | BULK.CMU.01 | CMU wall construction — BULK grade — bay A1 | WF-BULK-01 | BULK | architectural | 2026-08-24T12:12:00-07:00 | 2026-08-25T11:36:00-07:00 | 9.4 | 0.94 | 104.16 |  | 8 | masonry_cmu_hot_weather | True |  | True |
| A-1249 | BULK.CMU.01 | Bond beam & cell grouting — BULK grade — bay A1 | WF-BULK-01 | BULK | structural | 2026-08-25T11:36:00-07:00 | 2026-08-26T10:12:00-07:00 | 8.6 | 0.86 | 104.16 |  | 6 | concrete_cip_hot_weather | True |  | True |
| A-1250 | BULK.CMU.01 | Steel lintel & joist weld — BULK grade — bay A1 | WF-BULK-01 | BULK | structural | 2026-08-26T10:12:00-07:00 | 2026-08-27T07:24:00-07:00 | 7.2 | 0.72 | 104.16 |  | 4 | structural_welding_preheat | True |  | True |
| A-1251 | BULK.CMU.01 | Roof deck & waterproofing — BULK grade — bay A1 | WF-BULK-01 | BULK | architectural | 2026-08-27T07:24:00-07:00 | 2026-08-29T15:42:00-07:00 | 28.3 | 2.83 | 104.16 |  | 6 |  |  |  |  |
| A-1252 | BULK.CMU.01 | Perimeter joint sealant — BULK grade — bay A1 | WF-BULK-01 | BULK | architectural | 2026-09-02T09:42:00-07:00 | 2026-09-03T06:18:00-07:00 | 6.6 | 0.66 | 104.16 |  | 4 | sealant_silicone_weatherseal | True |  |  |
| A-1253 | BULK.CMU.01 | Interior fit-out — BULK grade — bay A1 | WF-BULK-01 | BULK | architectural | 2026-09-03T06:18:00-07:00 | 2026-09-09T11:48:00-07:00 | 45.5 | 4.55 | 104.16 |  | 6 |  |  |  |  |
| A-1254 | BULK.CMU.02 | Footing excavation — BULK grade — bay B1 | WF-BULK-02 | BULK | sitework | 2026-08-15T07:00:00-07:00 | 2026-08-17T13:54:00-07:00 | 16.9 | 1.69 | 105.41 |  | 4 |  |  |  |  |
| A-1255 | BULK.CMU.02 | Foundation pour — BULK grade — bay B1 | WF-BULK-02 | BULK | structural | 2026-08-17T13:54:00-07:00 | 2026-08-18T12:12:00-07:00 | 8.3 | 0.83 | 105.41 |  | 10 | concrete_cip_hot_weather | True |  |  |
| A-1256 | BULK.CMU.02 | CMU wall construction — BULK grade — bay B1 | WF-BULK-02 | BULK | architectural | 2026-08-24T10:12:00-07:00 | 2026-08-25T08:42:00-07:00 | 8.5 | 0.85 | 105.41 |  | 8 | masonry_cmu_hot_weather | True |  | True |
| A-1257 | BULK.CMU.02 | Bond beam & cell grouting — BULK grade — bay B1 | WF-BULK-02 | BULK | structural | 2026-08-25T08:42:00-07:00 | 2026-08-26T07:30:00-07:00 | 8.8 | 0.88 | 105.41 |  | 6 | concrete_cip_hot_weather | True |  | True |
| A-1258 | BULK.CMU.02 | Steel lintel & joist weld — BULK grade — bay B1 | WF-BULK-02 | BULK | structural | 2026-08-26T07:30:00-07:00 | 2026-08-26T14:42:00-07:00 | 7.2 | 0.72 | 105.41 |  | 4 | structural_welding_preheat | True |  | True |
| A-1259 | BULK.CMU.02 | Roof deck & waterproofing — BULK grade — bay B1 | WF-BULK-02 | BULK | architectural | 2026-08-26T14:42:00-07:00 | 2026-08-29T07:00:00-07:00 | 22.3 | 2.23 | 105.41 |  | 6 |  |  |  | True |
| A-1260 | BULK.CMU.02 | Perimeter joint sealant — BULK grade — bay B1 | WF-BULK-02 | BULK | architectural | 2026-09-01T11:00:00-07:00 | 2026-09-02T08:36:00-07:00 | 7.6 | 0.76 | 105.41 |  | 4 | sealant_silicone_weatherseal | True |  |  |
| A-1261 | BULK.CMU.02 | Interior fit-out — BULK grade — bay B1 | WF-BULK-02 | BULK | architectural | 2026-09-02T08:36:00-07:00 | 2026-09-08T09:18:00-07:00 | 40.7 | 4.07 | 105.41 |  | 6 |  |  |  |  |
| A-1262 | BULK.CMU.03 | Footing excavation — BULK L2 — bay A2 | WF-BULK-03 | BULK | sitework | 2026-08-15T07:00:00-07:00 | 2026-08-17T10:18:00-07:00 | 13.3 | 1.33 | 104.67 |  | 4 |  |  |  |  |
| A-1263 | BULK.CMU.03 | Foundation pour — BULK L2 — bay A2 | WF-BULK-03 | BULK | structural | 2026-08-17T10:18:00-07:00 | 2026-08-18T08:30:00-07:00 | 8.2 | 0.82 | 104.67 |  | 10 | concrete_cip_hot_weather | True |  |  |
| A-1264 | BULK.CMU.03 | CMU wall construction — BULK L2 — bay A2 | WF-BULK-03 | BULK | architectural | 2026-08-24T06:30:00-07:00 | 2026-08-25T06:36:00-07:00 | 10.1 | 1.01 | 104.67 |  | 8 | masonry_cmu_hot_weather | True |  | True |
| A-1265 | BULK.CMU.03 | Bond beam & cell grouting — BULK L2 — bay A2 | WF-BULK-03 | BULK | structural | 2026-08-25T06:36:00-07:00 | 2026-08-25T15:54:00-07:00 | 9.3 | 0.93 | 104.67 |  | 6 | concrete_cip_hot_weather | True |  | True |
| A-1266 | BULK.CMU.03 | Steel lintel & joist weld — BULK L2 — bay A2 | WF-BULK-03 | BULK | structural | 2026-08-25T15:54:00-07:00 | 2026-08-26T13:00:00-07:00 | 7.1 | 0.71 | 104.67 |  | 4 | structural_welding_preheat | True |  | True |
| A-1267 | BULK.CMU.03 | Roof deck & waterproofing — BULK L2 — bay A2 | WF-BULK-03 | BULK | architectural | 2026-08-26T13:00:00-07:00 | 2026-08-29T10:00:00-07:00 | 27 | 2.7 | 104.67 |  | 6 |  |  |  | True |
| A-1268 | BULK.CMU.03 | Perimeter joint sealant — BULK L2 — bay A2 | WF-BULK-03 | BULK | architectural | 2026-09-01T14:00:00-07:00 | 2026-09-02T11:30:00-07:00 | 7.5 | 0.75 | 104.67 |  | 4 | sealant_silicone_weatherseal | True |  |  |
| A-1269 | BULK.CMU.03 | Interior fit-out — BULK L2 — bay A2 | WF-BULK-03 | BULK | architectural | 2026-09-02T11:30:00-07:00 | 2026-09-09T06:42:00-07:00 | 45.2 | 4.52 | 104.67 |  | 6 |  |  |  |  |
| A-1270 | CHEM.CMU.01 | Footing excavation — CHEM grade — bay A1 | WF-CHEM-01 | CHEM | sitework | 2026-08-14T12:00:00-07:00 | 2026-08-15T15:00:00-07:00 | 13 | 1.3 | 106.61 |  | 4 |  |  |  |  |
| A-1271 | CHEM.CMU.01 | Foundation pour — CHEM grade — bay A1 | WF-CHEM-01 | CHEM | structural | 2026-08-15T15:00:00-07:00 | 2026-08-17T12:54:00-07:00 | 7.9 | 0.79 | 106.61 |  | 10 | concrete_cip_hot_weather | True |  |  |
| A-1272 | CHEM.CMU.01 | CMU wall construction — CHEM grade — bay A1 | WF-CHEM-01 | CHEM | architectural | 2026-08-22T10:54:00-07:00 | 2026-08-24T09:48:00-07:00 | 8.9 | 0.89 | 106.61 |  | 8 | masonry_cmu_hot_weather | True |  | True |
| A-1273 | CHEM.CMU.01 | Bond beam & cell grouting — CHEM grade — bay A1 | WF-CHEM-01 | CHEM | structural | 2026-08-24T09:48:00-07:00 | 2026-08-25T09:24:00-07:00 | 9.6 | 0.96 | 106.61 |  | 6 | concrete_cip_hot_weather | True |  | True |
| A-1274 | CHEM.CMU.01 | Steel lintel & joist weld — CHEM grade — bay A1 | WF-CHEM-01 | CHEM | structural | 2026-08-25T09:24:00-07:00 | 2026-08-26T07:06:00-07:00 | 7.7 | 0.77 | 106.61 |  | 4 | structural_welding_preheat | True |  | True |
| A-1275 | CHEM.CMU.01 | Roof deck & waterproofing — CHEM grade — bay A1 | WF-CHEM-01 | CHEM | architectural | 2026-08-26T07:06:00-07:00 | 2026-08-28T08:24:00-07:00 | 21.3 | 2.13 | 106.61 |  | 6 |  |  |  | True |
| A-1276 | CHEM.CMU.01 | Perimeter joint sealant — CHEM grade — bay A1 | WF-CHEM-01 | CHEM | architectural | 2026-08-31T12:24:00-07:00 | 2026-09-01T10:30:00-07:00 | 8.1 | 0.81 | 106.61 |  | 4 | sealant_silicone_weatherseal | True |  |  |
| A-1277 | CHEM.CMU.01 | Interior fit-out — CHEM grade — bay A1 | WF-CHEM-01 | CHEM | architectural | 2026-09-01T10:30:00-07:00 | 2026-09-05T07:18:00-07:00 | 36.8 | 3.68 | 106.61 |  | 6 |  |  |  |  |
| A-1278 | CHEM.CMU.02 | Footing excavation — CHEM grade — bay B1 | WF-CHEM-02 | CHEM | sitework | 2026-08-14T12:00:00-07:00 | 2026-08-15T15:00:00-07:00 | 13 | 1.3 | 105.85 |  | 4 |  |  |  |  |
| A-1279 | CHEM.CMU.02 | Foundation pour — CHEM grade — bay B1 | WF-CHEM-02 | CHEM | structural | 2026-08-15T15:00:00-07:00 | 2026-08-17T14:06:00-07:00 | 9.1 | 0.91 | 105.85 |  | 10 | concrete_cip_hot_weather | True |  |  |
| A-1280 | CHEM.CMU.02 | CMU wall construction — CHEM grade — bay B1 | WF-CHEM-02 | CHEM | architectural | 2026-08-22T12:06:00-07:00 | 2026-08-24T12:00:00-07:00 | 9.9 | 0.99 | 105.85 |  | 8 | masonry_cmu_hot_weather | True |  | True |

| id | wbs | name | work_face_id | structure_id | discipline | planned_start | planned_finish | duration_h | duration_d | total_float_d | crew_size | trade_id | thermal_sensitive | hold_point | in_demo_window | is_critical |
| --- | --- | --- | --- | --- | --- | --- | --- | --- | --- | --- | --- | --- | --- | --- | --- | --- |
| A-1281 | CHEM.CMU.02 | Bond beam & cell grouting — CHEM grade — bay B1 | WF-CHEM-02 | CHEM | structural | 2026-08-24T12:00:00-07:00 | 2026-08-25T11:18:00-07:00 | 9.3 | 0.93 | 105.85 | 6 | concrete_cip_hot_weather | True |  | True |  |
| A-1282 | CHEM.CMU.02 | Steel lintel & joist weld — CHEM grade — bay B1 | WF-CHEM-02 | CHEM | structural | 2026-08-25T11:18:00-07:00 | 2026-08-26T10:24:00-07:00 | 9.1 | 0.91 | 105.85 | 4 | structural_welding_preheat | True |  | True |  |
| A-1283 | CHEM.CMU.02 | Roof deck & waterproofing — CHEM grade — bay B1 | WF-CHEM-02 | CHEM | architectural | 2026-08-26T10:24:00-07:00 | 2026-08-29T07:42:00-07:00 | 27.3 | 2.73 | 105.85 | 6 |  |  |  | True |  |
| A-1284 | CHEM.CMU.02 | Perimeter joint sealant — CHEM grade — bay B1 | WF-CHEM-02 | CHEM | architectural | 2026-09-01T11:42:00-07:00 | 2026-09-02T10:00:00-07:00 | 8.3 | 0.83 | 105.85 | 4 | sealant_silicone_weatherseal | True |  |  |  |
| A-1285 | CHEM.CMU.02 | Interior fit-out — CHEM grade — bay B1 | WF-CHEM-02 | CHEM | architectural | 2026-09-02T10:00:00-07:00 | 2026-09-05T14:54:00-07:00 | 34.9 | 3.49 | 105.85 | 6 |  |  |  |  |  |
| A-1286 | CHEM.CMU.03 | Footing excavation — CHEM L2 — bay A2 | WF-CHEM-03 | CHEM | sitework | 2026-08-18T06:00:00-07:00 | 2026-08-19T11:48:00-07:00 | 15.8 | 1.58 | 103.09 | 4 |  |  |  |  |  |
| A-1287 | CHEM.CMU.03 | Foundation pour — CHEM L2 — bay A2 | WF-CHEM-03 | CHEM | structural | 2026-08-19T11:48:00-07:00 | 2026-08-20T09:48:00-07:00 | 8 | 0.8 | 103.09 | 10 | concrete_cip_hot_weather | True |  |  |  |
| A-1288 | CHEM.CMU.03 | CMU wall construction — CHEM L2 — bay A2 | WF-CHEM-03 | CHEM | architectural | 2026-08-26T07:48:00-07:00 | 2026-08-27T06:06:00-07:00 | 8.3 | 0.83 | 103.09 | 8 | masonry_cmu_hot_weather | True |  | True |  |
| A-1289 | CHEM.CMU.03 | Bond beam & cell grouting — CHEM L2 — bay A2 | WF-CHEM-03 | CHEM | structural | 2026-08-27T06:06:00-07:00 | 2026-08-27T15:42:00-07:00 | 9.6 | 0.96 | 103.09 | 6 | concrete_cip_hot_weather | True |  |  |  |
| A-1290 | CHEM.CMU.03 | Steel lintel & joist weld — CHEM L2 — bay A2 | WF-CHEM-03 | CHEM | structural | 2026-08-27T15:42:00-07:00 | 2026-08-28T14:48:00-07:00 | 9.1 | 0.91 | 103.09 | 4 | structural_welding_preheat | True |  |  |  |
| A-1291 | CHEM.CMU.03 | Roof deck & waterproofing — CHEM L2 — bay A2 | WF-CHEM-03 | CHEM | architectural | 2026-08-28T14:48:00-07:00 | 2026-09-01T06:24:00-07:00 | 21.6 | 2.16 | 103.09 | 6 |  |  |  |  |  |
| A-1292 | CHEM.CMU.03 | Perimeter joint sealant — CHEM L2 — bay A2 | WF-CHEM-03 | CHEM | architectural | 2026-09-03T10:24:00-07:00 | 2026-09-04T08:24:00-07:00 | 8 | 0.8 | 103.09 | 4 | sealant_silicone_weatherseal | True |  |  |  |
| A-1293 | CHEM.CMU.03 | Interior fit-out — CHEM L2 — bay A2 | WF-CHEM-03 | CHEM | architectural | 2026-09-04T08:24:00-07:00 | 2026-09-10T12:30:00-07:00 | 44.1 | 4.41 | 103.09 | 6 |  |  |  |  |  |
| A-1294 | ADMIN.CMU.01 | Footing excavation — ADMIN grade — bay A1 | WF-ADMIN-01 | ADMIN | sitework | 2027-02-12T12:00:00-07:00 | 2027-02-16T09:30:00-07:00 | 13.5 | 1.69 | 34.21 | 4 |  |  |  |  |  |
| A-1295 | ADMIN.CMU.01 | Foundation pour (cold weather protection) — ADMIN grade — bay A1 | WF-ADMIN-01 | ADMIN | structural | 2027-02-16T09:30:00-07:00 | 2027-02-17T09:00:00-07:00 | 7.5 | 0.94 | 34.21 | 10 | concrete_cip_cold_weather | True |  |  |  |
| A-1296 | ADMIN.CMU.01 | CMU wall construction — ADMIN grade — bay A1 | WF-ADMIN-01 | ADMIN | architectural | 2027-02-25T09:00:00-07:00 | 2027-02-26T08:42:00-07:00 | 7.7 | 0.96 | 34.21 | 8 | masonry_cmu_cold_weather | True |  |  |  |
| A-1297 | ADMIN.CMU.01 | Bond beam & cell grouting — ADMIN grade — bay A1 | WF-ADMIN-01 | ADMIN | structural | 2027-02-26T08:42:00-07:00 | 2027-03-01T08:54:00-07:00 | 8.2 | 1.02 | 34.21 | 6 | concrete_cip_cold_weather | True |  |  |  |
| A-1298 | ADMIN.CMU.01 | Steel lintel & joist weld — ADMIN grade — bay A1 | WF-ADMIN-01 | ADMIN | structural | 2027-03-01T08:54:00-07:00 | 2027-03-02T10:30:00-07:00 | 9.6 | 1.2 | 34.21 | 4 | structural_welding_preheat | True |  |  |  |
| A-1299 | ADMIN.CMU.01 | Roof deck & waterproofing — ADMIN grade — bay A1 | WF-ADMIN-01 | ADMIN | architectural | 2027-03-02T10:30:00-07:00 | 2027-03-05T10:36:00-07:00 | 24.1 | 3.01 | 34.21 | 6 |  |  |  |  |  |
| A-1300 | ADMIN.CMU.01 | Perimeter joint sealant — ADMIN grade — bay A1 | WF-ADMIN-01 | ADMIN | architectural | 2027-03-10T10:36:00-07:00 | 2027-03-11T10:12:00-07:00 | 7.6 | 0.95 | 34.21 | 4 | sealant_silicone_weatherseal | True |  |  |  |
| A-1301 | ADMIN.CMU.01 | Interior fit-out — ADMIN grade — bay A1 | WF-ADMIN-01 | ADMIN | architectural | 2027-03-11T10:12:00-07:00 | 2027-03-18T12:42:00-07:00 | 42.5 | 5.31 | 34.21 | 6 |  |  |  |  |  |
| A-1302 | ADMIN.CMU.02 | Footing excavation — ADMIN grade — bay B1 | WF-ADMIN-02 | ADMIN | sitework | 2027-02-15T08:00:00-07:00 | 2027-02-16T13:36:00-07:00 | 13.6 | 1.7 | 33.09 | 4 |  |  |  |  |  |
| A-1303 | ADMIN.CMU.02 | Foundation pour (cold weather protection) — ADMIN grade — bay B1 | WF-ADMIN-02 | ADMIN | structural | 2027-02-16T13:36:00-07:00 | 2027-02-17T13:00:00-07:00 | 7.4 | 0.93 | 33.09 | 10 | concrete_cip_cold_weather | True |  |  |  |
| A-1304 | ADMIN.CMU.02 | CMU wall construction — ADMIN grade — bay B1 | WF-ADMIN-02 | ADMIN | architectural | 2027-02-25T13:00:00-07:00 | 2027-02-26T14:06:00-07:00 | 9.1 | 1.14 | 33.09 | 8 | masonry_cmu_cold_weather | True |  |  |  |
| A-1305 | ADMIN.CMU.02 | Bond beam & cell grouting — ADMIN grade — bay B1 | WF-ADMIN-02 | ADMIN | structural | 2027-02-26T14:06:00-07:00 | 2027-03-01T13:48:00-07:00 | 7.7 | 0.96 | 33.09 | 6 | concrete_cip_cold_weather | True |  |  |  |
| A-1306 | ADMIN.CMU.02 | Steel lintel & joist weld — ADMIN grade — bay B1 | WF-ADMIN-02 | ADMIN | structural | 2027-03-01T13:48:00-07:00 | 2027-03-02T14:06:00-07:00 | 8.3 | 1.04 | 33.09 | 4 | structural_welding_preheat | True |  |  |  |
| A-1307 | ADMIN.CMU.02 | Roof deck & waterproofing — ADMIN grade — bay B1 | WF-ADMIN-02 | ADMIN | architectural | 2027-03-02T14:06:00-07:00 | 2027-03-08T09:18:00-07:00 | 27.2 | 3.4 | 33.09 | 6 |  |  |  |  |  |
| A-1308 | ADMIN.CMU.02 | Perimeter joint sealant — ADMIN grade — bay B1 | WF-ADMIN-02 | ADMIN | architectural | 2027-03-11T09:18:00-07:00 | 2027-03-12T08:06:00-07:00 | 6.8 | 0.85 | 33.09 | 4 | sealant_silicone_weatherseal | True |  |  |  |
| A-1309 | ADMIN.CMU.02 | Interior fit-out — ADMIN grade — bay B1 | WF-ADMIN-02 | ADMIN | architectural | 2027-03-12T08:06:00-07:00 | 2027-03-19T13:42:00-07:00 | 45.6 | 5.7 | 33.09 | 6 |  |  |  |  |  |
| A-1310 | PARK.WAREHOUSE.01 | Subgrade & vapour barrier — PARK grade — bay A1 | WF-PARK-01 | PARK | sitework | 2026-08-12T09:00:00-07:00 | 2026-08-14T08:24:00-07:00 | 19.4 | 1.94 | 108.91 | 5 |  |  |  |  |  |
| A-1311 | PARK.WAREHOUSE.01 | Slab on grade pour — PARK grade — bay A1 | WF-PARK-01 | PARK | structural | 2026-08-14T08:24:00-07:00 | 2026-08-15T06:36:00-07:00 | 8.2 | 0.82 | 108.91 | 12 | concrete_cip_hot_weather | True |  |  |  |
| A-1312 | PARK.WAREHOUSE.01 | Precast panel erection — PARK grade — bay A1 | WF-PARK-01 | PARK | structural | 2026-08-24T08:36:00-07:00 | 2026-08-27T11:06:00-07:00 | 32.5 | 3.25 | 108.91 | 8 |  |  |  | True |  |
| A-1313 | PARK.WAREHOUSE.01 | Connection weld — PARK grade — bay A1 | WF-PARK-01 | PARK | structural | 2026-08-27T11:06:00-07:00 | 2026-08-28T08:30:00-07:00 | 7.4 | 0.74 | 108.91 | 4 | structural_welding_preheat | True |  |  |  |
| A-1314 | PARK.WAREHOUSE.01 | Panel joint sealant — PARK grade — bay A1 | WF-PARK-01 | PARK | architectural | 2026-08-28T08:30:00-07:00 | 2026-08-28T14:30:00-07:00 | 6 | 0.6 | 108.91 | 4 | sealant_silicone_weatherseal | True |  |  |  |
| A-1315 | PARK.WAREHOUSE.01 | Spray-applied fireproofing — PARK grade — bay A1 | WF-PARK-01 | PARK | structural | 2026-08-28T14:30:00-07:00 | 2026-08-29T15:12:00-07:00 | 10.7 | 1.07 | 108.91 | 6 | sfrm_spray_applied_fireproofing | True |  |  |  |
| A-1316 | PARK.WAREHOUSE.01 | Interior floor marking — PARK grade — bay A1 | WF-PARK-01 | PARK | architectural | 2026-09-02T09:12:00-07:00 | 2026-09-02T14:18:00-07:00 | 5.1 | 0.51 | 108.91 | 4 | pavement_marking_waterborne | True |  |  |  |
| A-1317 | PARK.WAREHOUSE.02 | Subgrade & vapour barrier — PARK grade — bay B1 | WF-PARK-02 | PARK | sitework | 2026-08-12T13:00:00-07:00 | 2026-08-14T14:00:00-07:00 | 21 | 2.1 | 108.02 | 5 |  |  |  |  |  |
| A-1318 | PARK.WAREHOUSE.02 | Slab on grade pour — PARK grade — bay B1 | WF-PARK-02 | PARK | structural | 2026-08-14T14:00:00-07:00 | 2026-08-15T10:54:00-07:00 | 6.9 | 0.69 | 108.02 | 12 | concrete_cip_hot_weather | True |  |  |  |
| A-1319 | PARK.WAREHOUSE.02 | Precast panel erection — PARK grade — bay B1 | WF-PARK-02 | PARK | structural | 2026-08-24T12:54:00-07:00 | 2026-08-28T08:12:00-07:00 | 35.3 | 3.53 | 108.02 | 8 |  |  |  | True |  |
| A-1320 | PARK.WAREHOUSE.02 | Connection weld — PARK grade — bay B1 | WF-PARK-02 | PARK | structural | 2026-08-28T08:12:00-07:00 | 2026-08-29T06:18:00-07:00 | 8.1 | 0.81 | 108.02 | 4 | structural_welding_preheat | True |  |  |  |
| A-1321 | PARK.WAREHOUSE.02 | Panel joint sealant — PARK grade — bay B1 | WF-PARK-02 | PARK | architectural | 2026-08-29T06:18:00-07:00 | 2026-08-29T14:24:00-07:00 | 8.1 | 0.81 | 108.02 | 4 | sealant_silicone_weatherseal | True |  |  |  |
| A-1322 | PARK.WAREHOUSE.02 | Spray-applied fireproofing — PARK grade — bay B1 | WF-PARK-02 | PARK | structural | 2026-08-29T14:24:00-07:00 | 2026-08-31T14:48:00-07:00 | 10.4 | 1.04 | 108.02 | 6 | sfrm_spray_applied_fireproofing | True | Special inspector — SFRM thickness & density verification |  |  |
| A-1323 | PARK.WAREHOUSE.02 | Interior floor marking — PARK grade — bay B1 | WF-PARK-02 | PARK | architectural | 2026-09-03T08:48:00-07:00 | 2026-09-03T13:12:00-07:00 | 4.4 | 0.44 | 108.02 | 4 | pavement_marking_waterborne | True |  |  |  |
| A-1324 | ROAD.PAVING.01 | Subgrade preparation — ROAD grade — bay A1 | WF-ROAD-01 | ROAD | sitework | 2026-12-28T07:00:00-07:00 | 2026-12-31T06:36:00-07:00 | 29.6 | 2.96 | 0 | 6 |  |  |  |  | True |
| A-1325 | ROAD.PAVING.01 | Aggregate base course — ROAD grade — bay A1 | WF-ROAD-01 | ROAD | sitework | 2026-12-31T06:36:00-07:00 | 2027-01-04T08:42:00-07:00 | 22.1 | 2.21 | 0 | 6 |  |  |  |  | True |
| A-1326 | ROAD.PAVING.01 | HMA base course — ROAD grade — bay A1 | WF-ROAD-01 | ROAD | sitework | 2027-01-04T08:42:00-07:00 | 2027-01-05T06:24:00-07:00 | 7.7 | 0.77 | 0 | 10 | hma_paving_surface_course | True |  |  | True |
| A-1327 | ROAD.PAVING.01 | HMA surface course — ROAD grade — bay A1 | WF-ROAD-01 | ROAD | sitework | 2027-01-07T10:24:00-07:00 | 2027-01-08T10:24:00-07:00 | 10 | 1 | 0 | 10 | hma_paving_surface_course | True |  |  | True |
| A-1328 | ROAD.PAVING.01 | Pavement marking & striping — ROAD grade — bay A1 | WF-ROAD-01 | ROAD | sitework | 2027-01-14T08:24:00-07:00 | 2027-01-14T13:24:00-07:00 | 5 | 0.5 | 0 | 4 | pavement_marking_waterborne | True |  |  | True |
